# Cronograma

Schedule from MS Project, 2015-03-24 to 2015-05-25, status date 2015-03-26, 9 hours a day, A marks actual dates.

## Calendars

- Standard: Mon-Fri 08:00-12:00, 13:00-17:00; Sat-Sun off. Exceptions (off unless hours are given): 2015-04-02 to 2015-04-03 (Semana Santa), 2015-05-01 (Dia trabajo), 2015-05-18 (Festivo).

## Resources

| Resource |
| --- |
| Gabriel |
| Julian |

## Schedule

| ID | WBS | Task | Duration | Start | Finish | Predecessors | Complete | Remaining | Baseline start | Baseline finish | Baseline duration | Total slack | Resources | Work | Actual work | Esperado |
| --- | --- | --- | --- | --- | --- | --- | --- | --- | --- | --- | --- | --- | --- | --- | --- | --- |
| 1 | 1 | **Tuils Proyecto** | 35.72d | 2015-03-24 08:00 A | 2015-05-25 09:30 |  | 15% | 30.54d | 2015-03-25 08:00 | 2015-08-26 16:00 | 89.67d | 0d |  | 1201h | 174.19h | 1% |
| 2 | 1.1 | **Inicio** | 2.5d | 2015-03-26 08:00 A | 2015-03-30 15:30 A |  | 100% |  | 2015-03-25 08:00 | 2015-03-27 15:30 | 2.5d |  |  | 22.5h | 22.5h | 56% |
| 3 | 1.1.1 | **Configurar ambiente Inicial** | 1.5d | 2015-03-26 08:00 A | 2015-03-27 14:30 A |  | 100% |  | 2015-03-25 08:00 | 2015-03-26 14:30 | 1.5d |  |  | 13.5h | 13.5h | 59% |
| 4 | 1.1.1.1 | Configurar estructura github | 1.5h | 2015-03-26 08:00 A | 2015-03-26 09:30 A |  | 100% |  | 2015-03-25 08:00 | 2015-03-25 09:30 | 1.5h |  | Gabriel | 1.5h | 1.5h | 100% |
| 5 | 1.1.1.2 | Configurar solución | 4h | 2015-03-26 09:30 A | 2015-03-26 14:30 A | 4 | 100% |  | 2015-03-25 09:30 | 2015-03-25 14:30 | 4h |  | Gabriel | 4h | 4h | 100% |
| 6 | 1.1.1.3 | Crear BD | 1h | 2015-03-26 14:30 A | 2015-03-26 15:30 A | 5 | 100% |  | 2015-03-25 14:30 | 2015-03-25 15:30 | 1h |  | Gabriel | 1h | 1h | 100% |
| 7 | 1.1.1.4 | Agregar proyecto a Github | 4h | 2015-03-26 15:30 A | 2015-03-27 10:30 A | 6 | 100% |  | 2015-03-25 15:30 | 2015-03-26 10:30 | 4h |  | Gabriel | 4h | 4h | 38% |
| 8 | 1.1.1.5 | Configurar idioma Español | 3h | 2015-03-27 10:30 A | 2015-03-27 14:30 A | 7 | 100% |  | 2015-03-26 10:30 | 2015-03-26 14:30 | 3h |  | Gabriel | 3h | 3h | 0% |
| 9 | 1.1.2 | **Diseño** | 1d | 2015-03-27 14:30 A | 2015-03-30 15:30 A |  | 100% |  | 2015-03-26 14:30 | 2015-03-27 15:30 | 1d |  |  | 9h | 9h | 50% |
| 10 | 1.1.2.1 | Diseño de BD | 9h | 2015-03-27 14:30 A | 2015-03-30 15:30 A |  | 100% |  | 2015-03-26 14:30 | 2015-03-27 15:30 | 9h |  | Gabriel | 9h | 9h | 50% |
| 11 | 1.2 | **Fase 1 (Ventas)** | 31.44d | 2015-03-30 15:30 A | 2015-05-25 09:30 | 2 | 17% | 26.01d | 2015-03-27 15:30 | 2015-06-30 08:30 | 52.67d | 0d |  | 878h | 151.69h | 0% |
| 12 | 1.2.1 | **Desarrollo** | 28.89d | 2015-03-30 15:30 A | 2015-05-20 10:30 |  | 30% | 20.36d | 2015-03-27 15:30 | 2015-06-18 10:30 | 46.67d | 2.56d |  | 514h | 151.69h | 0% |
| 13 | 1.2.1.1 | **Publicacion Producto** | 8.89d | 2015-03-30 15:30 A | 2015-04-15 15:30 |  | 97% | 0.3d | 2015-03-27 15:30 | 2015-04-15 10:30 | 9.33d | 22.56d |  | 80h | 77.3h | 0% |
| 14 | 1.2.1.1.1 | **Paso1 (Seleccionar Categoria)** | 2.44d | 2015-03-30 15:30 A | 2015-04-06 13:30 A |  | 100% |  | 2015-03-27 15:30 | 2015-04-01 13:30 | 2.44d |  |  | 22h | 22h |  |
| 15 | 1.2.1.1.1.1 | Ajustes de BD | 2h | 2015-03-30 15:30 A | 2015-03-31 08:30 A |  | 100% |  | 2015-03-27 15:30 | 2015-03-30 08:30 | 2h |  | Gabriel | 2h | 2h |  |
| 16 | 1.2.1.1.1.2 | Menú Superior Tipo Producto | 2h | 2015-03-31 08:30 A | 2015-03-31 10:30 A | 15 | 100% |  | 2015-03-30 08:30 | 2015-03-30 10:30 | 2h |  | Gabriel | 2h | 2h |  |
| 17 | 1.2.1.1.1.3 | Paso actual en el proceso | 2h | 2015-03-31 10:30 A | 2015-03-31 13:30 A | 16 | 100% |  | 2015-03-30 10:30 | 2015-03-30 13:30 | 2h |  | Gabriel | 2h | 2h |  |
| 18 | 1.2.1.1.1.4 | **Seleccion de Categorias** | 1.44d | 2015-03-31 13:30 A | 2015-04-06 09:30 A | 17 | 100% |  | 2015-03-30 13:30 | 2015-04-01 09:30 | 1.44d |  |  | 13h | 13h |  |
| 19 | 1.2.1.1.1.4.1 | Acceso a Datos | 3h | 2015-03-31 13:30 A | 2015-03-31 16:30 A |  | 100% |  | 2015-03-30 13:30 | 2015-03-30 16:30 | 3h |  | Gabriel | 3h | 3h |  |
| 20 | 1.2.1.1.1.4.2 | Filtro por seleccion | 3h | 2015-03-31 16:30 A | 2015-04-01 10:30 A | 19 | 100% |  | 2015-03-30 16:30 | 2015-03-31 10:30 | 3h |  | Gabriel | 3h | 3h |  |
| 21 | 1.2.1.1.1.4.3 | Filtro por texto | 3h | 2015-04-01 10:30 A | 2015-04-01 14:30 A | 20 | 100% |  | 2015-03-31 10:30 | 2015-03-31 14:30 | 3h |  | Gabriel | 3h | 3h |  |
| 22 | 1.2.1.1.1.4.4 | Ultimo seleccionado | 2h | 2015-04-01 14:30 A | 2015-04-01 16:30 A | 21 | 100% |  | 2015-03-31 14:30 | 2015-03-31 16:30 | 2h |  | Gabriel | 2h | 2h |  |
| 23 | 1.2.1.1.1.4.5 | Guardar | 2h | 2015-04-01 16:30 A | 2015-04-06 09:30 A | 22 | 100% |  | 2015-03-31 16:30 | 2015-04-01 09:30 | 2h |  | Gabriel | 2h | 2h |  |
| 24 | 1.2.1.1.1.5 | Pruebas Unitarias | 3h | 2015-04-06 09:30 A | 2015-04-06 13:30 A | 23 | 100% |  | 2015-04-01 09:30 | 2015-04-01 13:30 | 3h |  | Gabriel | 3h | 3h |  |

| ID | WBS | Task | Duration | Start | Finish | Predecessors | Complete | Remaining | Baseline start | Baseline finish | Baseline duration | Total slack | Resources | Work | Actual work | Esperado |
| --- | --- | --- | --- | --- | --- | --- | --- | --- | --- | --- | --- | --- | --- | --- | --- | --- |
| 25 | 1.2.1.1.2 | **Paso2 (Detalle Producto)** | 2.56d | 2015-04-06 13:30 A | 2015-04-09 11:30 | 14 | 95% | 0.13d | 2015-04-01 13:30 | 2015-04-08 11:30 | 2.56d | 0d |  | 23h | 21.8h |  |
| 26 | 1.2.1.1.2.1 | Menu tipo producto | 1h | 2015-04-06 13:30 A | 2015-04-06 14:30 A |  | 100% |  | 2015-04-01 13:30 | 2015-04-01 14:30 | 1h |  | Gabriel | 1h | 1h |  |
| 27 | 1.2.1.1.2.2 | Menu numero de paso | 1h | 2015-04-06 14:30 A | 2015-04-06 15:30 A | 26 | 100% |  | 2015-04-01 14:30 | 2015-04-01 15:30 | 1h |  | Gabriel | 1h | 1h |  |
| 28 | 1.2.1.1.2.3 | Acceso a datos | 2h | 2015-04-06 15:30 A | 2015-04-07 08:30 A | 27 | 100% |  | 2015-04-01 15:30 | 2015-04-06 08:30 | 2h |  | Gabriel | 2h | 2h |  |
| 29 | 1.2.1.1.2.4 | Datos básicos producto | 1h | 2015-04-07 08:30 A | 2015-04-07 09:30 A | 28 | 100% |  | 2015-04-06 08:30 | 2015-04-06 09:30 | 1h |  | Gabriel | 1h | 1h |  |
| 30 | 1.2.1.1.2.5 | Seleccionar tipo de moto | 5h | 2015-04-07 09:30 A | 2015-04-07 15:30 A | 29 | 100% |  | 2015-04-06 09:30 | 2015-04-06 15:30 | 5h |  | Gabriel | 5h | 5h |  |
| 31 | 1.2.1.1.2.6 | Datos de envío | 3h | 2015-04-07 15:30 A | 2015-04-08 09:30 A | 30 | 100% |  | 2015-04-06 15:30 | 2015-04-07 09:30 | 3h |  | Gabriel | 3h | 3h |  |
| 32 | 1.2.1.1.2.7 | Editor HTML | 6h | 2015-04-08 09:30 A | 2015-04-08 16:30 | 31 | 80% | 1.2h | 2015-04-07 09:30 | 2015-04-07 16:30 | 6h | 0.44d | Gabriel | 6h | 4.8h |  |
| 33 | 1.2.1.1.2.8 | Guardar | 2h | 2015-04-08 16:30 A | 2015-04-09 09:30 A | 32 | 100% |  | 2015-04-07 16:30 | 2015-04-08 09:30 | 2h |  | Gabriel | 2h | 2h |  |
| 34 | 1.2.1.1.2.9 | Pruebas unitarias | 2h | 2015-04-09 09:30 A | 2015-04-09 11:30 A | 33 | 100% |  | 2015-04-08 09:30 | 2015-04-08 11:30 | 2h |  | Gabriel | 2h | 2h |  |
| 35 | 1.2.1.1.3 | **Paso3 (Seleccionador Fotos)** | 2d | 2015-04-09 11:30 A | 2015-04-13 14:30 | 25 | 92% | 0.17d | 2015-04-08 11:30 | 2015-04-10 14:30 | 2d | 24.44d |  | 18h | 16.5h |  |
| 36 | 1.2.1.1.3.1 | Mostrar fotos | 3h | 2015-04-09 11:30 A | 2015-04-09 15:30 A |  | 100% |  | 2015-04-08 11:30 | 2015-04-08 15:30 | 3h |  | Gabriel | 3h | 3h |  |
| 37 | 1.2.1.1.3.2 | Seleccionar foto | 3h | 2015-04-09 15:30 A | 2015-04-10 09:30 A | 36 | 100% |  | 2015-04-08 15:30 | 2015-04-09 09:30 | 3h |  | Gabriel | 3h | 3h |  |
| 38 | 1.2.1.1.3.3 | Cambiar foto | 3h | 2015-04-10 09:30 A | 2015-04-10 13:30 A | 37 | 100% |  | 2015-04-09 09:30 | 2015-04-09 13:30 | 3h |  | Gabriel | 3h | 3h |  |
| 39 | 1.2.1.1.3.4 | Eliminar foto | 3h | 2015-04-10 13:30 A | 2015-04-10 16:30 | 38 | 50% | 1.5h | 2015-04-09 13:30 | 2015-04-09 16:30 | 3h | 25.11d | Gabriel | 3h | 1.5h |  |
| 40 | 1.2.1.1.3.5 | Guardar fotos | 3h | 2015-04-10 16:30 A | 2015-04-13 10:30 A | 39 | 100% |  | 2015-04-09 16:30 | 2015-04-10 10:30 | 3h |  | Gabriel | 3h | 3h |  |
| 41 | 1.2.1.1.3.6 | Pruebas unitarias | 3h | 2015-04-13 10:30 A | 2015-04-13 14:30 A | 40 | 100% |  | 2015-04-10 10:30 | 2015-04-10 14:30 | 3h |  | Gabriel | 3h | 3h |  |
| 42 | 1.2.1.1.4 | **Paso 4 (Resumen)** | 1.22d | 2015-04-13 14:30 A | 2015-04-15 08:30 A | 35 | 100% |  | 2015-04-10 14:30 | 2015-04-14 08:30 | 1.22d |  |  | 11h | 11h |  |
| 43 | 1.2.1.1.4.1 | Datos basicos | 2h | 2015-04-13 14:30 A | 2015-04-13 16:30 A |  | 100% |  | 2015-04-10 14:30 | 2015-04-10 16:30 | 2h |  | Gabriel | 2h | 2h |  |
| 44 | 1.2.1.1.4.2 | Imagenes | 2h | 2015-04-13 16:30 A | 2015-04-14 09:30 A | 43 | 100% |  | 2015-04-10 16:30 | 2015-04-13 09:30 | 2h |  | Gabriel | 2h | 2h |  |
| 45 | 1.2.1.1.4.3 | Aceptar terminos y condiciones | 1h | 2015-04-14 09:30 A | 2015-04-14 10:30 A | 44 | 100% |  | 2015-04-13 09:30 | 2015-04-13 10:30 | 1h |  | Gabriel | 1h | 1h |  |
| 46 | 1.2.1.1.4.4 | Volver | 2h | 2015-04-14 10:30 A | 2015-04-14 13:30 A | 45 | 100% |  | 2015-04-13 10:30 | 2015-04-13 13:30 | 2h |  | Gabriel | 2h | 2h |  |
| 47 | 1.2.1.1.4.5 | Publicar | 2h | 2015-04-14 13:30 A | 2015-04-14 15:30 A | 46 | 100% |  | 2015-04-13 13:30 | 2015-04-13 15:30 | 2h |  | Gabriel | 2h | 2h |  |
| 48 | 1.2.1.1.4.6 | Pruebas unitarias | 2h | 2015-04-14 15:30 A | 2015-04-15 08:30 A | 47 | 100% |  | 2015-04-13 15:30 | 2015-04-14 08:30 | 2h |  | Gabriel | 2h | 2h |  |
| 49 | 1.2.1.1.5 | Ajustar Diseño | 6h | 2015-04-15 08:30 A | 2015-04-15 15:30 A | 42 | 100% |  | 2015-04-14 13:30 | 2015-04-15 10:30 | 6h |  | Gabriel | 6h | 6h |  |
| 50 | 1.2.1.2 | Seleccionar tipo de producto | 4h | 2015-04-15 15:30 A | 2015-04-16 10:30 |  | 66% | 1.36h | 2015-04-15 10:30 | 2015-04-15 15:30 | 4h | 22.11d | Gabriel | 4h | 2.64h | 0% |

| ID | WBS | Task | Duration | Start | Finish | Baseline start | Baseline finish | Baseline duration | Total slack | Resources | Work |
| --- | --- | --- | --- | --- | --- | --- | --- | --- | --- | --- | --- |
| 51 | 1.2.1.3 | **Publicacion Producto Servicio** | 0.44d | 2015-03-30 15:30 | 2015-03-31 10:30 | 2015-07-23 09:30 | 2015-07-30 15:30 | 5d | 31d |  | 45h |
| 52 | 1.2.1.3.1 | **Paso1 (Seleccionar Categoria)** | 0.33d | 2015-03-30 15:30 | 2015-03-31 09:30 | 2015-07-23 09:30 | 2015-07-24 15:30 | 1.44d | 31.11d |  | 13h |
| 53 | 1.2.1.3.1.1 | Ajustes de BD | 3h | 2015-03-30 15:30 | 2015-03-31 09:30 | 2015-07-23 09:30 | 2015-07-23 13:30 | 3h | 31.11d | Gabriel | 3h |
| 54 | 1.2.1.3.1.2 | Menú Superior Tipo Producto | 1h | 2015-03-30 15:30 | 2015-03-30 16:30 | 2015-07-23 13:30 | 2015-07-23 14:30 | 1h | 31.33d | Gabriel | 1h |
| 55 | 1.2.1.3.1.3 | Paso actual en el proceso | 1h | 2015-03-30 15:30 | 2015-03-30 16:30 | 2015-07-23 14:30 | 2015-07-23 15:30 | 1h | 31.33d | Gabriel | 1h |
| 56 | 1.2.1.3.1.4 | **Seleccion de Categorias** | 0.22d | 2015-03-30 15:30 | 2015-03-31 08:30 | 2015-07-23 15:30 | 2015-07-24 13:30 | 0.67d | 31.22d |  | 6h |
| 57 | 1.2.1.3.1.4.1 | Acceso a Datos | 1h | 2015-03-30 15:30 | 2015-03-30 16:30 | 2015-07-23 15:30 | 2015-07-23 16:30 | 1h | 31.33d | Gabriel | 1h |
| 58 | 1.2.1.3.1.4.2 | Filtro por seleccion | 2h | 2015-03-30 15:30 | 2015-03-31 08:30 | 2015-07-23 16:30 | 2015-07-24 09:30 | 2h | 31.22d | Gabriel | 2h |
| 59 | 1.2.1.3.1.4.3 | Filtro por texto | 1h | 2015-03-30 15:30 | 2015-03-30 16:30 | 2015-07-24 09:30 | 2015-07-24 10:30 | 1h | 31.33d | Gabriel | 1h |
| 60 | 1.2.1.3.1.4.4 | Ultimo seleccionado | 1h | 2015-03-30 15:30 | 2015-03-30 16:30 | 2015-07-24 10:30 | 2015-07-24 11:30 | 1h | 31.33d | Gabriel | 1h |
| 61 | 1.2.1.3.1.4.5 | Guardar | 1h | 2015-03-30 15:30 | 2015-03-30 16:30 | 2015-07-24 11:30 | 2015-07-24 13:30 | 1h | 31.33d | Gabriel | 1h |
| 62 | 1.2.1.3.1.5 | Pruebas Unitarias | 2h | 2015-03-30 15:30 | 2015-03-31 08:30 | 2015-07-24 13:30 | 2015-07-24 15:30 | 2h | 31.22d | Gabriel | 2h |
| 63 | 1.2.1.3.2 | **Paso2 (Detalle Producto)** | 0.44d | 2015-03-30 15:30 | 2015-03-31 10:30 | 2015-07-24 15:30 | 2015-07-29 14:30 | 2.56d | 31d |  | 23h |
| 64 | 1.2.1.3.2.1 | Acceso a datos | 4h | 2015-03-30 15:30 | 2015-03-31 10:30 | 2015-07-24 15:30 | 2015-07-27 10:30 | 4h | 31d | Gabriel | 4h |
| 65 | 1.2.1.3.2.2 | Datos básicos producto | 2h | 2015-03-30 15:30 | 2015-03-31 08:30 | 2015-07-27 10:30 | 2015-07-27 13:30 | 2h | 31.22d | Gabriel | 2h |
| 66 | 1.2.1.3.2.3 | Seleccionar tipo de moto | 3h | 2015-03-30 15:30 | 2015-03-31 09:30 | 2015-07-27 13:30 | 2015-07-27 16:30 | 3h | 31.11d | Gabriel | 3h |
| 67 | 1.2.1.3.2.4 | Datos de domicilio | 4h | 2015-03-30 15:30 | 2015-03-31 10:30 | 2015-07-27 16:30 | 2015-07-28 11:30 | 4h | 31d | Gabriel | 4h |
| 68 | 1.2.1.3.2.5 | Insumos | 4h | 2015-03-30 15:30 | 2015-03-31 10:30 | 2015-07-28 11:30 | 2015-07-28 16:30 | 4h | 31d | Gabriel | 4h |
| 69 | 1.2.1.3.2.6 | Editor HTML | 2h | 2015-03-30 15:30 | 2015-03-31 08:30 | 2015-07-28 16:30 | 2015-07-29 09:30 | 2h | 31.22d | Gabriel | 2h |
| 70 | 1.2.1.3.2.7 | Guardar | 1h | 2015-03-30 15:30 | 2015-03-30 16:30 | 2015-07-29 09:30 | 2015-07-29 10:30 | 1h | 31.33d | Gabriel | 1h |
| 71 | 1.2.1.3.2.8 | Pruebas unitarias | 3h | 2015-03-30 15:30 | 2015-03-31 09:30 | 2015-07-29 10:30 | 2015-07-29 14:30 | 3h | 31.11d | Gabriel | 3h |
| 72 | 1.2.1.3.3 | **Paso 3 (Resumen)** | 0.22d | 2015-03-30 15:30 | 2015-03-31 08:30 | 2015-07-29 14:30 | 2015-07-30 15:30 | 1d | 31.22d |  | 9h |
| 73 | 1.2.1.3.3.1 | Datos basicos | 2h | 2015-03-30 15:30 | 2015-03-31 08:30 | 2015-07-29 14:30 | 2015-07-29 16:30 | 2h | 31.22d | Gabriel | 2h |
| 74 | 1.2.1.3.3.2 | Imagenes | 2h | 2015-03-30 15:30 | 2015-03-31 08:30 | 2015-07-29 16:30 | 2015-07-30 09:30 | 2h | 31.22d | Gabriel | 2h |
| 75 | 1.2.1.3.3.3 | Aceptar terminos y condiciones | 1h | 2015-03-30 15:30 | 2015-03-30 16:30 | 2015-07-30 09:30 | 2015-07-30 10:30 | 1h | 31.33d | Gabriel | 1h |
| 76 | 1.2.1.3.3.4 | Volver | 1h | 2015-03-30 15:30 | 2015-03-30 16:30 | 2015-07-30 10:30 | 2015-07-30 11:30 | 1h | 31.33d | Gabriel | 1h |
| 77 | 1.2.1.3.3.5 | Publicar | 1h | 2015-03-30 15:30 | 2015-03-30 16:30 | 2015-07-30 11:30 | 2015-07-30 13:30 | 1h | 31.33d | Gabriel | 1h |
| 78 | 1.2.1.3.3.6 | Pruebas unitarias | 2h | 2015-03-30 15:30 | 2015-03-31 08:30 | 2015-07-30 13:30 | 2015-07-30 15:30 | 2h | 31.22d | Gabriel | 2h |

| ID | WBS | Task | Duration | Start | Finish | Complete | Remaining | Baseline start | Baseline finish | Baseline duration | Total slack | Resources | Work | Actual work | Esperado |
| --- | --- | --- | --- | --- | --- | --- | --- | --- | --- | --- | --- | --- | --- | --- | --- |
| 79 | 1.2.1.4 | **Publicación Moto** | 15.56d | 2015-03-30 15:30 A | 2015-04-27 10:30 | 93% | 1.17d | 2015-04-15 15:30 | 2015-04-24 15:30 | 6.22d | 15.89d |  | 56h | 51.8h | 0% |
| 80 | 1.2.1.4.1 | **Paso1 (Seleccionar Categoria)** | 11.22d | 2015-03-30 15:30 A | 2015-04-20 11:30 | 85% | 1.68d | 2015-04-15 15:30 | 2015-04-20 10:30 | 2.22d | 20.22d |  | 20h | 17h |  |
| 81 | 1.2.1.4.1.1 | Ajustes de BD | 4h | 2015-04-16 10:30 A | 2015-04-16 15:30 A | 100% |  | 2015-04-15 15:30 | 2015-04-16 10:30 | 4h |  | Gabriel | 4h | 4h |  |
| 82 | 1.2.1.4.1.2 | Menú Superior Tipo Producto | 1h | 2015-04-16 15:30 A | 2015-04-16 16:30 A | 100% |  | 2015-04-16 10:30 | 2015-04-16 11:30 | 1h |  | Gabriel | 1h | 1h |  |
| 83 | 1.2.1.4.1.3 | Paso actual en el proceso | 1h | 2015-04-16 16:30 A | 2015-04-17 08:30 A | 100% |  | 2015-04-16 11:30 | 2015-04-16 13:30 | 1h |  | Gabriel | 1h | 1h |  |
| 84 | 1.2.1.4.1.4 | **Seleccion de Categorias** | 1.22d | 2015-04-17 08:30 A | 2015-04-20 11:30 A | 100% |  | 2015-04-16 13:30 | 2015-04-17 16:30 | 1.22d |  |  | 11h | 11h |  |
| 85 | 1.2.1.4.1.4.1 | Acceso a Datos | 4h | 2015-04-17 08:30 A | 2015-04-17 13:30 A | 100% |  | 2015-04-16 13:30 | 2015-04-17 08:30 | 4h |  | Gabriel | 4h | 4h |  |
| 86 | 1.2.1.4.1.4.2 | Filtro por seleccion | 2h | 2015-04-17 13:30 A | 2015-04-17 15:30 A | 100% |  | 2015-04-17 08:30 | 2015-04-17 10:30 | 2h |  | Gabriel | 2h | 2h |  |
| 87 | 1.2.1.4.1.4.3 | Filtro por texto | 2h | 2015-04-17 15:30 A | 2015-04-20 08:30 A | 100% |  | 2015-04-17 10:30 | 2015-04-17 13:30 | 2h |  | Gabriel | 2h | 2h |  |
| 88 | 1.2.1.4.1.4.4 | Ultimo seleccionado | 1h | 2015-04-20 08:30 A | 2015-04-20 09:30 A | 100% |  | 2015-04-17 13:30 | 2015-04-17 14:30 | 1h |  | Gabriel | 1h | 1h |  |
| 89 | 1.2.1.4.1.4.5 | Guardar | 2h | 2015-04-20 09:30 A | 2015-04-20 11:30 A | 100% |  | 2015-04-17 14:30 | 2015-04-17 16:30 | 2h |  | Gabriel | 2h | 2h |  |
| 90 | 1.2.1.4.1.5 | Pruebas Unitarias | 3h | 2015-03-30 15:30 | 2015-03-31 09:30 |  |  | 2015-04-17 16:30 | 2015-04-20 10:30 | 3h | 31.11d | Gabriel | 3h |  |  |
| 91 | 1.2.1.4.2 | **Paso2 (Detalle Producto)** | 1.56d | 2015-04-20 15:30 A | 2015-04-22 13:30 A | 100% |  | 2015-04-20 10:30 | 2015-04-22 08:30 | 1.56d |  |  | 14h | 14h |  |
| 92 | 1.2.1.4.2.1 | Acceso a datos | 4h | 2015-04-20 15:30 A | 2015-04-21 10:30 A | 100% |  | 2015-04-20 10:30 | 2015-04-20 15:30 | 4h |  | Gabriel | 4h | 4h |  |
| 93 | 1.2.1.4.2.2 | Datos básicos producto | 1h | 2015-04-21 10:30 A | 2015-04-21 11:30 A | 100% |  | 2015-04-20 15:30 | 2015-04-20 16:30 | 1h |  | Gabriel | 1h | 1h |  |
| 94 | 1.2.1.4.2.3 | Seleccionar tipo de moto | 5h | 2015-04-21 11:30 A | 2015-04-22 08:30 A | 100% |  | 2015-04-20 16:30 | 2015-04-21 13:30 | 5h |  | Gabriel | 5h | 5h |  |
| 95 | 1.2.1.4.2.4 | Guardar | 2h | 2015-04-22 08:30 A | 2015-04-22 10:30 A | 100% |  | 2015-04-21 13:30 | 2015-04-21 15:30 | 2h |  | Gabriel | 2h | 2h |  |
| 96 | 1.2.1.4.2.5 | Pruebas unitarias | 2h | 2015-04-22 10:30 A | 2015-04-22 13:30 A | 100% |  | 2015-04-21 15:30 | 2015-04-22 08:30 | 2h |  | Gabriel | 2h | 2h |  |
| 97 | 1.2.1.4.3 | **Paso3 (Seleccionador Fotos)** | 0.89d | 2015-04-22 13:30 A | 2015-04-23 13:30 A | 100% |  | 2015-04-22 08:30 | 2015-04-23 08:30 | 0.89d |  |  | 8h | 8h |  |
| 98 | 1.2.1.4.3.1 | Mostrar fotos | 2h | 2015-04-22 13:30 A | 2015-04-22 15:30 A | 100% |  | 2015-04-22 08:30 | 2015-04-22 10:30 | 2h |  | Gabriel | 2h | 2h |  |
| 99 | 1.2.1.4.3.2 | Seleccionar foto | 1h | 2015-04-22 15:30 A | 2015-04-22 16:30 A | 100% |  | 2015-04-22 10:30 | 2015-04-22 11:30 | 1h |  | Gabriel | 1h | 1h |  |
| 100 | 1.2.1.4.3.3 | Cambiar foto | 1h | 2015-04-22 16:30 A | 2015-04-23 08:30 A | 100% |  | 2015-04-22 11:30 | 2015-04-22 13:30 | 1h |  | Gabriel | 1h | 1h |  |
| 101 | 1.2.1.4.3.4 | Eliminar foto | 1h | 2015-04-23 08:30 A | 2015-04-23 09:30 A | 100% |  | 2015-04-22 13:30 | 2015-04-22 14:30 | 1h |  | Gabriel | 1h | 1h |  |
| 102 | 1.2.1.4.3.5 | Guardar fotos | 1h | 2015-04-23 09:30 A | 2015-04-23 10:30 A | 100% |  | 2015-04-22 14:30 | 2015-04-22 15:30 | 1h |  | Gabriel | 1h | 1h |  |
| 103 | 1.2.1.4.3.6 | Pruebas unitarias | 2h | 2015-04-23 10:30 A | 2015-04-23 13:30 A | 100% |  | 2015-04-22 15:30 | 2015-04-23 08:30 | 2h |  | Gabriel | 2h | 2h |  |

| ID | WBS | Task | Duration | Start | Finish | Complete | Remaining | Baseline start | Baseline finish | Baseline duration | Total slack | Resources | Work | Actual work | Esperado |
| --- | --- | --- | --- | --- | --- | --- | --- | --- | --- | --- | --- | --- | --- | --- | --- |
| 104 | 1.2.1.4.4 | **Paso 4 (Resumen)** | 0.89d | 2015-04-23 13:30 A | 2015-04-24 13:30 A | 100% |  | 2015-04-23 08:30 | 2015-04-24 08:30 | 0.89d |  |  | 8h | 8h |  |
| 105 | 1.2.1.4.4.1 | Datos basicos | 2h | 2015-04-23 13:30 A | 2015-04-23 15:30 A | 100% |  | 2015-04-23 08:30 | 2015-04-23 10:30 | 2h |  | Gabriel | 2h | 2h |  |
| 106 | 1.2.1.4.4.2 | Imagenes | 1h | 2015-04-23 15:30 A | 2015-04-23 16:30 A | 100% |  | 2015-04-23 10:30 | 2015-04-23 11:30 | 1h |  | Gabriel | 1h | 1h |  |
| 107 | 1.2.1.4.4.3 | Aceptar terminos y condiciones | 1h | 2015-04-23 16:30 A | 2015-04-24 08:30 A | 100% |  | 2015-04-23 11:30 | 2015-04-23 13:30 | 1h |  | Gabriel | 1h | 1h |  |
| 108 | 1.2.1.4.4.4 | Volver | 1h | 2015-04-24 08:30 A | 2015-04-24 09:30 A | 100% |  | 2015-04-23 13:30 | 2015-04-23 14:30 | 1h |  | Gabriel | 1h | 1h |  |
| 109 | 1.2.1.4.4.5 | Publicar | 1h | 2015-04-24 09:30 A | 2015-04-24 10:30 A | 100% |  | 2015-04-23 14:30 | 2015-04-23 15:30 | 1h |  | Gabriel | 1h | 1h |  |
| 110 | 1.2.1.4.4.6 | Pruebas unitarias | 2h | 2015-04-24 10:30 A | 2015-04-24 13:30 A | 100% |  | 2015-04-23 15:30 | 2015-04-24 08:30 | 2h |  | Gabriel | 2h | 2h |  |
| 111 | 1.2.1.4.5 | Ajustar Diseño | 6h | 2015-04-24 13:30 A | 2015-04-27 10:30 | 80% | 1.2h | 2015-04-24 08:30 | 2015-04-24 15:30 | 6h | 15.89d | Gabriel | 6h | 4.8h |  |
| 112 | 1.2.1.5 | **Detalle Tienda** | 0.56d | 2015-03-30 15:30 | 2015-03-31 11:30 |  |  | 2015-07-08 10:30 | 2015-07-14 09:30 | 3.44d | 30.89d |  | 31h |  |  |
| 113 | 1.2.1.5.1 | Fondo de tienda | 2h | 2015-03-30 15:30 | 2015-03-31 08:30 |  |  | 2015-07-08 10:30 | 2015-07-08 13:30 | 2h | 31.22d | Gabriel | 2h |  |  |
| 114 | 1.2.1.5.2 | Imagenes adicionales | 5h | 2015-03-30 15:30 | 2015-03-31 11:30 |  |  | 2015-07-08 13:30 | 2015-07-09 09:30 | 5h | 30.89d | Gabriel | 5h |  |  |
| 115 | 1.2.1.5.3 | Informacion básica | 2h | 2015-03-30 15:30 | 2015-03-31 08:30 |  |  | 2015-07-09 09:30 | 2015-07-09 11:30 | 2h | 31.22d | Gabriel | 2h |  |  |
| 116 | 1.2.1.5.4 | Enviar mensaje privado | 1h | 2015-03-30 15:30 | 2015-03-30 16:30 |  |  | 2015-07-09 11:30 | 2015-07-09 13:30 | 1h | 31.33d | Gabriel | 1h |  |  |
| 117 | 1.2.1.5.5 | Contar experiencia | 1h | 2015-03-30 15:30 | 2015-03-30 16:30 |  |  | 2015-07-09 13:30 | 2015-07-09 14:30 | 1h | 31.33d | Gabriel | 1h |  |  |
| 118 | 1.2.1.5.6 | **Listado de productos** | 0.44d | 2015-03-30 15:30 | 2015-03-31 10:30 |  |  | 2015-07-09 14:30 | 2015-07-10 14:30 | 0.89d | 31d |  | 8h |  |  |
| 119 | 1.2.1.5.6.1 | Listar productos | 4h | 2015-03-30 15:30 | 2015-03-31 10:30 |  |  | 2015-07-09 14:30 | 2015-07-10 09:30 | 4h | 31d | Gabriel | 4h |  |  |
| 120 | 1.2.1.5.6.2 | Filtrar Productos | 3h | 2015-03-30 15:30 | 2015-03-31 09:30 |  |  | 2015-07-10 09:30 | 2015-07-10 13:30 | 3h | 31.11d | Gabriel | 3h |  |  |
| 121 | 1.2.1.5.6.3 | Paginar productos | 1h | 2015-03-30 15:30 | 2015-03-30 16:30 |  |  | 2015-07-10 13:30 | 2015-07-10 14:30 | 1h | 31.33d | Gabriel | 1h |  |  |
| 122 | 1.2.1.5.7 | Listar comentarios | 3h | 2015-03-30 15:30 | 2015-03-31 09:30 |  |  | 2015-07-10 14:30 | 2015-07-13 08:30 | 3h | 31.11d | Gabriel | 3h |  |  |
| 123 | 1.2.1.5.8 | **Mapas** | 0.44d | 2015-03-30 15:30 | 2015-03-31 10:30 |  |  | 2015-07-13 08:30 | 2015-07-14 09:30 | 1d | 31d |  | 9h |  |  |
| 124 | 1.2.1.5.8.1 | Mostrar sedes | 4h | 2015-03-30 15:30 | 2015-03-31 10:30 |  |  | 2015-07-13 08:30 | 2015-07-13 13:30 | 4h | 31d | Gabriel | 4h |  |  |
| 125 | 1.2.1.5.8.2 | Informacion básica | 1h | 2015-03-30 15:30 | 2015-03-30 16:30 |  |  | 2015-07-13 13:30 | 2015-07-13 14:30 | 1h | 31.33d | Gabriel | 1h |  |  |
| 126 | 1.2.1.5.8.3 | Ubicar punto | 4h | 2015-03-30 15:30 | 2015-03-31 10:30 |  |  | 2015-07-13 14:30 | 2015-07-14 09:30 | 4h | 31d | Gabriel | 4h |  |  |
| 127 | 1.2.1.6 | **Panel de Control** | 1d | 2015-03-30 15:30 | 2015-03-31 16:30 |  |  | 2015-05-22 16:30 | 2015-06-10 15:30 | 10.56d | 30.44d |  | 139h |  | 0% |
| 128 | 1.2.1.6.1 | Home Panel De Control | 6h | 2015-03-30 15:30 | 2015-03-31 13:30 |  |  | 2015-05-22 16:30 | 2015-05-25 14:30 | 6h | 30.78d | Gabriel | 6h |  | 0% |

| ID | WBS | Task | Duration | Start | Finish | Baseline start | Baseline finish | Baseline duration | Total slack | Resources | Work | Esperado |
| --- | --- | --- | --- | --- | --- | --- | --- | --- | --- | --- | --- | --- |
| 129 | 1.2.1.6.2 | **Mis datos** | 0.33d | 2015-03-30 15:30 | 2015-03-31 09:30 | 2015-05-25 14:30 | 2015-05-27 15:30 | 1.89d | 31.11d |  | 17h | 0% |
| 130 | 1.2.1.6.2.1 | BD | 2h | 2015-03-30 15:30 | 2015-03-31 08:30 | 2015-05-25 14:30 | 2015-05-25 16:30 | 2h | 31.22d | Gabriel | 2h |  |
| 131 | 1.2.1.6.2.2 | Datos basicos | 3h | 2015-03-30 15:30 | 2015-03-31 09:30 | 2015-05-25 16:30 | 2015-05-26 10:30 | 3h | 31.11d | Gabriel | 3h |  |
| 132 | 1.2.1.6.2.3 | **Mi moto** | 0.33d | 2015-03-30 15:30 | 2015-03-31 09:30 | 2015-05-26 10:30 | 2015-05-26 16:30 | 0.56d | 31.11d |  | 5h |  |
| 133 | 1.2.1.6.2.3.1 | Seleccion de marca | 3h | 2015-03-30 15:30 | 2015-03-31 09:30 | 2015-05-26 10:30 | 2015-05-26 14:30 | 3h | 31.11d | Gabriel | 3h |  |
| 134 | 1.2.1.6.2.3.2 | Datos adicionales | 1h | 2015-03-30 15:30 | 2015-03-30 16:30 | 2015-05-26 14:30 | 2015-05-26 15:30 | 1h | 31.33d | Gabriel | 1h |  |
| 135 | 1.2.1.6.2.3.3 | Carga de logo | 1h | 2015-03-30 15:30 | 2015-03-30 16:30 | 2015-05-26 15:30 | 2015-05-26 16:30 | 1h | 31.33d | Gabriel | 1h |  |
| 136 | 1.2.1.6.2.4 | **Cambiar Clave** | 0.11d | 2015-03-30 15:30 | 2015-03-30 16:30 | 2015-05-26 16:30 | 2015-05-27 09:30 | 0.22d | 31.33d |  | 2h |  |
| 137 | 1.2.1.6.2.4.1 | Ajustar diseño | 1h | 2015-03-30 15:30 | 2015-03-30 16:30 | 2015-05-26 16:30 | 2015-05-27 08:30 | 1h | 31.33d | Gabriel | 1h |  |
| 138 | 1.2.1.6.2.4.2 | Retornar a edicion de datos | 1h | 2015-03-30 15:30 | 2015-03-30 16:30 | 2015-05-27 08:30 | 2015-05-27 09:30 | 1h | 31.33d | Gabriel | 1h |  |
| 139 | 1.2.1.6.2.5 | Guardar | 2h | 2015-03-30 15:30 | 2015-03-31 08:30 | 2015-05-27 09:30 | 2015-05-27 11:30 | 2h | 31.22d | Gabriel | 2h |  |
| 140 | 1.2.1.6.2.6 | Pruebas unitarias | 3h | 2015-03-30 15:30 | 2015-03-31 09:30 | 2015-05-27 11:30 | 2015-05-27 15:30 | 3h | 31.11d | Gabriel | 3h |  |
| 141 | 1.2.1.6.3 | **Actualizacion de Tienda** | 0.67d | 2015-03-30 15:30 | 2015-03-31 13:30 | 2015-06-30 15:30 | 2015-07-08 10:30 | 4.89d | 30.78d |  | 44h |  |
| 142 | 1.2.1.6.3.1 | BD | 2h | 2015-03-30 15:30 | 2015-03-31 08:30 | 2015-06-30 15:30 | 2015-07-01 08:30 | 2h | 31.22d | Gabriel | 2h |  |
| 143 | 1.2.1.6.3.2 | Datos basicos | 2h | 2015-03-30 15:30 | 2015-03-31 08:30 | 2015-07-01 08:30 | 2015-07-01 10:30 | 2h | 31.22d | Gabriel | 2h |  |
| 144 | 1.2.1.6.3.3 | Cargar logo | 3h | 2015-03-30 15:30 | 2015-03-31 09:30 | 2015-07-01 10:30 | 2015-07-01 14:30 | 3h | 31.11d | Gabriel | 3h |  |
| 145 | 1.2.1.6.3.4 | Cargar fondo | 2h | 2015-03-30 15:30 | 2015-03-31 08:30 | 2015-07-01 14:30 | 2015-07-01 16:30 | 2h | 31.22d | Gabriel | 2h |  |
| 146 | 1.2.1.6.3.5 | Servicios especializados | 6h | 2015-03-30 15:30 | 2015-03-31 13:30 | 2015-07-01 16:30 | 2015-07-02 14:30 | 6h | 30.78d | Gabriel | 6h |  |
| 147 | 1.2.1.6.3.6 | Recibir cotizaciones de | 2h | 2015-03-30 15:30 | 2015-03-31 08:30 | 2015-07-02 14:30 | 2015-07-02 16:30 | 2h | 31.22d | Gabriel | 2h |  |
| 148 | 1.2.1.6.3.7 | Referencias especializadas | 4h | 2015-03-30 15:30 | 2015-03-31 10:30 | 2015-07-02 16:30 | 2015-07-03 11:30 | 4h | 31d | Gabriel | 4h |  |
| 149 | 1.2.1.6.3.8 | **Imagenes Adicionales** | 0.44d | 2015-03-30 15:30 | 2015-03-31 10:30 | 2015-07-03 11:30 | 2015-07-06 10:30 | 0.78d | 31d |  | 7h |  |
| 150 | 1.2.1.6.3.8.1 | Agregar | 4h | 2015-03-30 15:30 | 2015-03-31 10:30 | 2015-07-03 11:30 | 2015-07-03 16:30 | 4h | 31d | Gabriel | 4h |  |
| 151 | 1.2.1.6.3.8.2 | Eliminar | 1h | 2015-03-30 15:30 | 2015-03-30 16:30 | 2015-07-03 16:30 | 2015-07-06 08:30 | 1h | 31.33d | Gabriel | 1h |  |
| 152 | 1.2.1.6.3.8.3 | Cambiar | 2h | 2015-03-30 15:30 | 2015-03-31 08:30 | 2015-07-06 08:30 | 2015-07-06 10:30 | 2h | 31.22d | Gabriel | 2h |  |

| ID | WBS | Task | Duration | Start | Finish | Baseline start | Baseline finish | Baseline duration | Total slack | Resources | Work | Esperado |
| --- | --- | --- | --- | --- | --- | --- | --- | --- | --- | --- | --- | --- |
| 153 | 1.2.1.6.3.9 | **Sedes** | 0.44d | 2015-03-30 15:30 | 2015-03-31 10:30 | 2015-07-06 10:30 | 2015-07-08 10:30 | 1.78d | 31d |  | 16h |  |
| 154 | 1.2.1.6.3.9.1 | BD | 3h | 2015-03-30 15:30 | 2015-03-31 09:30 | 2015-07-06 10:30 | 2015-07-06 14:30 | 3h | 31.11d | Gabriel | 3h |  |
| 155 | 1.2.1.6.3.9.2 | Listar | 2h | 2015-03-30 15:30 | 2015-03-31 08:30 | 2015-07-06 14:30 | 2015-07-06 16:30 | 2h | 31.22d | Gabriel | 2h |  |
| 156 | 1.2.1.6.3.9.3 | Crear | 4h | 2015-03-30 15:30 | 2015-03-31 10:30 | 2015-07-06 16:30 | 2015-07-07 11:30 | 4h | 31d | Gabriel | 4h |  |
| 157 | 1.2.1.6.3.9.4 | Editar | 2h | 2015-03-30 15:30 | 2015-03-31 08:30 | 2015-07-07 11:30 | 2015-07-07 14:30 | 2h | 31.22d | Gabriel | 2h |  |
| 158 | 1.2.1.6.3.9.5 | Eliminar | 1h | 2015-03-30 15:30 | 2015-03-30 16:30 | 2015-07-07 14:30 | 2015-07-07 15:30 | 1h | 31.33d | Gabriel | 1h |  |
| 159 | 1.2.1.6.3.9.6 | Ubicar en mapa | 4h | 2015-03-30 15:30 | 2015-03-31 10:30 | 2015-07-07 15:30 | 2015-07-08 10:30 | 4h | 31d | Gabriel | 4h |  |
| 160 | 1.2.1.6.4 | **Mis productos** | 0.33d | 2015-03-30 15:30 | 2015-03-31 09:30 | 2015-05-27 15:30 | 2015-06-01 08:30 | 2d | 31.11d |  | 18h | 0% |
| 161 | 1.2.1.6.4.1 | Filtro de tipo de producto | 2h | 2015-03-30 15:30 | 2015-03-31 08:30 | 2015-05-27 15:30 | 2015-05-28 08:30 | 2h | 31.22d | Gabriel | 2h |  |
| 162 | 1.2.1.6.4.2 | Filtro estado | 2h | 2015-03-30 15:30 | 2015-03-31 08:30 | 2015-05-28 08:30 | 2015-05-28 10:30 | 2h | 31.22d | Gabriel | 2h |  |
| 163 | 1.2.1.6.4.3 | Listado de productos | 3h | 2015-03-30 15:30 | 2015-03-31 09:30 | 2015-05-28 10:30 | 2015-05-28 14:30 | 3h | 31.11d | Gabriel | 3h |  |
| 164 | 1.2.1.6.4.4 | Acceso a datos | 2h | 2015-03-30 15:30 | 2015-03-31 08:30 | 2015-05-28 14:30 | 2015-05-28 16:30 | 2h | 31.22d | Gabriel | 2h |  |
| 165 | 1.2.1.6.4.5 | **Responder preguntas** | 0.33d | 2015-03-30 15:30 | 2015-03-31 09:30 | 2015-05-28 16:30 | 2015-05-29 14:30 | 0.67d | 31.11d |  | 6h |  |
| 166 | 1.2.1.6.4.5.1 | Listado de preguntas | 3h | 2015-03-30 15:30 | 2015-03-31 09:30 | 2015-05-28 16:30 | 2015-05-29 10:30 | 3h | 31.11d | Gabriel | 3h |  |
| 167 | 1.2.1.6.4.5.2 | Guardado de datos | 2h | 2015-03-30 15:30 | 2015-03-31 08:30 | 2015-05-29 10:30 | 2015-05-29 13:30 | 2h | 31.22d | Gabriel | 2h |  |
| 168 | 1.2.1.6.4.5.3 | Enviar notificacion | 1h | 2015-03-30 15:30 | 2015-03-30 16:30 | 2015-05-29 13:30 | 2015-05-29 14:30 | 1h | 31.33d | Gabriel | 1h |  |
| 169 | 1.2.1.6.4.6 | Pruebas unitarias | 3h | 2015-03-30 15:30 | 2015-03-31 09:30 | 2015-05-29 14:30 | 2015-06-01 08:30 | 3h | 31.11d | Gabriel | 3h |  |
| 170 | 1.2.1.6.5 | **Mis ventas** | 0.33d | 2015-03-30 15:30 | 2015-03-31 09:30 | 2015-06-01 08:30 | 2015-06-02 09:30 | 1d | 31.11d |  | 9h | 0% |
| 171 | 1.2.1.6.5.1 | Listado de productos | 3h | 2015-03-30 15:30 | 2015-03-31 09:30 | 2015-06-01 08:30 | 2015-06-01 11:30 | 3h | 31.11d | Gabriel | 3h |  |
| 172 | 1.2.1.6.5.2 | Filtro | 2h | 2015-03-30 15:30 | 2015-03-31 08:30 | 2015-06-01 11:30 | 2015-06-01 14:30 | 2h | 31.22d | Gabriel | 2h |  |
| 173 | 1.2.1.6.5.3 | Acceso a datos | 2h | 2015-03-30 15:30 | 2015-03-31 08:30 | 2015-06-01 14:30 | 2015-06-01 16:30 | 2h | 31.22d | Gabriel | 2h |  |
| 174 | 1.2.1.6.5.4 | Pruebas unitarias | 2h | 2015-03-30 15:30 | 2015-03-31 08:30 | 2015-06-01 16:30 | 2015-06-02 09:30 | 2h | 31.22d | Gabriel | 2h |  |
| 175 | 1.2.1.6.6 | **Mis Compras** | 0.44d | 2015-03-30 15:30 | 2015-03-31 10:30 | 2015-06-02 09:30 | 2015-06-04 15:30 | 2.33d | 31d |  | 21h | 0% |
| 176 | 1.2.1.6.6.1 | Listado de productos | 4h | 2015-03-30 15:30 | 2015-03-31 10:30 | 2015-06-02 09:30 | 2015-06-02 14:30 | 4h | 31d | Gabriel | 4h |  |
| 177 | 1.2.1.6.6.2 | Filtros | 3h | 2015-03-30 15:30 | 2015-03-31 09:30 | 2015-06-02 14:30 | 2015-06-03 08:30 | 3h | 31.11d | Gabriel | 3h |  |
| 178 | 1.2.1.6.6.3 | Paginacion | 2h | 2015-03-30 15:30 | 2015-03-31 08:30 | 2015-06-03 08:30 | 2015-06-03 10:30 | 2h | 31.22d | Gabriel | 2h |  |
| 179 | 1.2.1.6.6.4 | BD | 2h | 2015-03-30 15:30 | 2015-03-31 08:30 | 2015-06-03 10:30 | 2015-06-03 13:30 | 2h | 31.22d | Gabriel | 2h |  |

| ID | WBS | Task | Duration | Start | Finish | Complete | Remaining | Baseline start | Baseline finish | Baseline duration | Total slack | Resources | Work | Actual work | Esperado |
| --- | --- | --- | --- | --- | --- | --- | --- | --- | --- | --- | --- | --- | --- | --- | --- |
| 180 | 1.2.1.6.6.5 | **Calificar** | 0.22d | 2015-03-30 15:30 | 2015-03-31 08:30 |  |  | 2015-06-03 13:30 | 2015-06-04 11:30 | 0.78d | 31.22d |  | 7h |  |  |
| 181 | 1.2.1.6.6.5.1 | Datos basicos | 2h | 2015-03-30 15:30 | 2015-03-31 08:30 |  |  | 2015-06-03 13:30 | 2015-06-03 15:30 | 2h | 31.22d | Gabriel | 2h |  |  |
| 182 | 1.2.1.6.6.5.2 | BD | 2h | 2015-03-30 15:30 | 2015-03-31 08:30 |  |  | 2015-06-03 15:30 | 2015-06-04 08:30 | 2h | 31.22d | Gabriel | 2h |  |  |
| 183 | 1.2.1.6.6.5.3 | Guardar | 2h | 2015-03-30 15:30 | 2015-03-31 08:30 |  |  | 2015-06-04 08:30 | 2015-06-04 10:30 | 2h | 31.22d | Gabriel | 2h |  |  |
| 184 | 1.2.1.6.6.5.4 | Volver a listado | 1h | 2015-03-30 15:30 | 2015-03-30 16:30 |  |  | 2015-06-04 10:30 | 2015-06-04 11:30 | 1h | 31.33d | Gabriel | 1h |  |  |
| 185 | 1.2.1.6.6.6 | Pruebas unitarias | 3h | 2015-03-30 15:30 | 2015-03-31 09:30 |  |  | 2015-06-04 11:30 | 2015-06-04 15:30 | 3h | 31.11d | Gabriel | 3h |  |  |
| 186 | 1.2.1.6.7 | **Mensajes Recibidos** | 0.44d | 2015-03-30 15:30 | 2015-03-31 10:30 |  |  | 2015-06-04 15:30 | 2015-06-09 14:30 | 1.67d | 31d |  | 15h |  | 0% |
| 187 | 1.2.1.6.7.1 | Listado de mensajes | 4h | 2015-03-30 15:30 | 2015-03-31 10:30 |  |  | 2015-06-04 15:30 | 2015-06-05 10:30 | 4h | 31d | Gabriel | 4h |  |  |
| 188 | 1.2.1.6.7.2 | Filtro | 2h | 2015-03-30 15:30 | 2015-03-31 08:30 |  |  | 2015-06-05 10:30 | 2015-06-05 13:30 | 2h | 31.22d | Gabriel | 2h |  |  |
| 189 | 1.2.1.6.7.3 | Cargar hilo de mensajes | 4h | 2015-03-30 15:30 | 2015-03-31 10:30 |  |  | 2015-06-05 13:30 | 2015-06-09 08:30 | 4h | 31d | Gabriel | 4h |  |  |
| 190 | 1.2.1.6.7.4 | Responder mensaje | 2h | 2015-03-30 15:30 | 2015-03-31 08:30 |  |  | 2015-06-09 08:30 | 2015-06-09 10:30 | 2h | 31.22d | Gabriel | 2h |  |  |
| 191 | 1.2.1.6.7.5 | Pruebas unitarias | 3h | 2015-03-30 15:30 | 2015-03-31 09:30 |  |  | 2015-06-09 10:30 | 2015-06-09 14:30 | 3h | 31.11d | Gabriel | 3h |  |  |
| 192 | 1.2.1.6.8 | Panel de notificaciones | 9h | 2015-03-30 15:30 | 2015-03-31 16:30 |  |  | 2015-06-09 14:30 | 2015-06-10 15:30 | 9h | 30.44d | Gabriel | 9h |  | 0% |
| 193 | 1.2.1.7 | **Registro** | 27.56d | 2015-03-30 15:30 A | 2015-05-15 15:30 | 71% | 7.94d | 2015-05-12 14:30 | 2015-05-15 10:30 | 2.33d | 3.89d |  | 21h | 14.95h | 0% |
| 194 | 1.2.1.7.1 | Tipo persona | 3h | 2015-05-13 09:30 A | 2015-05-13 13:30 | 85% | 0.45h | 2015-05-12 14:30 | 2015-05-13 08:30 | 3h | 5.89d | Gabriel | 3h | 2.55h |  |
| 195 | 1.2.1.7.2 | Datos basicos | 3h | 2015-05-13 13:30 A | 2015-05-13 16:30 A | 100% |  | 2015-05-13 08:30 | 2015-05-13 11:30 | 3h |  | Gabriel | 3h | 3h |  |
| 196 | 1.2.1.7.3 | Guardar datos | 3h | 2015-05-13 16:30 A | 2015-05-14 10:30 A | 100% |  | 2015-05-13 11:30 | 2015-05-13 15:30 | 3h |  | Gabriel | 3h | 3h |  |
| 197 | 1.2.1.7.4 | Enviar correo de confirmacion | 1h | 2015-03-30 15:30 | 2015-03-30 16:30 |  |  | 2015-05-13 15:30 | 2015-05-13 16:30 | 1h | 31.33d | Gabriel | 1h |  |  |
| 198 | 1.2.1.7.5 | Pruebas unitarias | 3h | 2015-05-14 11:30 A | 2015-05-14 15:30 | 80% | 0.6h | 2015-05-13 16:30 | 2015-05-14 10:30 | 3h | 4.78d | Gabriel | 3h | 2.4h |  |
| 199 | 1.2.1.7.6 | **Registro rapido** | 0.89d | 2015-05-14 15:30 A | 2015-05-15 15:30 | 50% | 0.44d | 2015-05-14 10:30 | 2015-05-15 10:30 | 0.89d | 3.89d |  | 8h | 4h |  |
| 200 | 1.2.1.7.6.1 | Creacion funcionalidad | 6h | 2015-05-14 15:30 A | 2015-05-15 13:30 | 50% | 3h | 2015-05-14 10:30 | 2015-05-15 08:30 | 6h | 4.11d | Gabriel | 6h | 3h |  |
| 201 | 1.2.1.7.6.2 | Llamado en los sitios pendientes | 2h | 2015-05-15 13:30 A | 2015-05-15 15:30 | 50% | 1h | 2015-05-15 08:30 | 2015-05-15 10:30 | 2h | 3.89d | Gabriel | 2h | 1h |  |
| 202 | 1.2.1.8 | **Autenticacion** | 28.89d | 2015-03-30 15:30 A | 2015-05-20 10:30 | 42% | 16.85d | 2015-05-15 10:30 | 2015-05-19 15:30 | 1.33d | 2.56d |  | 12h | 5h | 0% |
| 203 | 1.2.1.8.1 | Datos basicos | 3h | 2015-03-30 15:30 | 2015-03-31 09:30 |  |  | 2015-05-15 10:30 | 2015-05-15 14:30 | 3h | 31.11d | Gabriel | 3h |  |  |
| 204 | 1.2.1.8.2 | Autenticacion | 2h | 2015-03-30 15:30 | 2015-03-31 08:30 |  |  | 2015-05-15 14:30 | 2015-05-15 16:30 | 2h | 31.22d | Gabriel | 2h |  |  |
| 205 | 1.2.1.8.3 | Pruebas unitarias | 2h | 2015-03-30 15:30 | 2015-03-31 08:30 |  |  | 2015-05-15 16:30 | 2015-05-19 09:30 | 2h | 31.22d | Gabriel | 2h |  |  |

| ID | WBS | Task | Duration | Start | Finish | Complete | Baseline start | Baseline finish | Baseline duration | Total slack | Resources | Work | Actual work | Esperado |
| --- | --- | --- | --- | --- | --- | --- | --- | --- | --- | --- | --- | --- | --- | --- |
| 206 | 1.2.1.8.4 | **Autenticacion Rapida** | 0.56d | 2015-05-19 14:30 A | 2015-05-20 10:30 A | 100% | 2015-05-19 09:30 | 2015-05-19 15:30 | 0.56d |  |  | 5h | 5h |  |
| 207 | 1.2.1.8.4.1 | Crear funcionalidad | 3h | 2015-05-19 14:30 A | 2015-05-20 08:30 A | 100% | 2015-05-19 09:30 | 2015-05-19 13:30 | 3h |  | Gabriel | 3h | 3h |  |
| 208 | 1.2.1.8.4.2 | Llamado en los sitios pendientes | 2h | 2015-05-20 08:30 A | 2015-05-20 10:30 A | 100% | 2015-05-19 13:30 | 2015-05-19 15:30 | 2h |  | Gabriel | 2h | 2h |  |
| 209 | 1.2.1.9 | **Recordar Clave** | 0.22d | 2015-03-30 15:30 | 2015-03-31 08:30 |  | 2015-05-19 15:30 | 2015-05-20 09:30 | 0.33d | 31.22d |  | 3h |  | 0% |
| 210 | 1.2.1.9.1 | Revisar funcionalidad | 2h | 2015-03-30 15:30 | 2015-03-31 08:30 |  | 2015-05-19 15:30 | 2015-05-20 08:30 | 2h | 31.22d | Gabriel | 2h |  |  |
| 211 | 1.2.1.9.2 | Enviar correo | 1h | 2015-03-30 15:30 | 2015-03-30 16:30 |  | 2015-05-20 08:30 | 2015-05-20 09:30 | 1h | 31.33d | Gabriel | 1h |  |  |
| 212 | 1.2.1.10 | **Listado de productos** | 1.78d | 2015-03-30 15:30 | 2015-04-01 15:30 |  | 2015-04-24 15:30 | 2015-04-29 10:30 | 2.22d | 29.67d |  | 20h |  | 0% |
| 213 | 1.2.1.10.1 | Listado de productos | 4h | 2015-03-30 15:30 | 2015-03-31 10:30 |  | 2015-04-24 15:30 | 2015-04-27 10:30 | 4h | 31d | Gabriel | 4h |  |  |
| 214 | 1.2.1.10.2 | Mejorar filtrado | 16h | 2015-03-30 15:30 | 2015-04-01 15:30 |  | 2015-04-27 10:30 | 2015-04-29 10:30 | 16h | 29.67d | Gabriel | 16h |  |  |
| 215 | 1.2.1.11 | **Detalle del Producto** | 0.44d | 2015-03-30 15:30 | 2015-03-31 10:30 |  | 2015-04-29 10:30 | 2015-05-05 11:30 | 2.78d | 31d |  | 25h |  | 0% |
| 216 | 1.2.1.11.1 | Revision de links y carga de info | 4h | 2015-03-30 15:30 | 2015-03-31 10:30 |  | 2015-04-29 10:30 | 2015-04-29 15:30 | 4h | 31d | Gabriel | 4h |  | 0% |
| 217 | 1.2.1.11.2 | Comprar y notificar | 3h | 2015-03-30 15:30 | 2015-03-31 09:30 |  | 2015-04-29 15:30 | 2015-04-30 09:30 | 3h | 31.11d | Gabriel | 3h |  | 0% |
| 218 | 1.2.1.11.3 | **Pestaña detalle de producto** | 0.44d | 2015-03-30 15:30 | 2015-03-31 10:30 |  | 2015-04-30 09:30 | 2015-04-30 16:30 | 0.67d | 31d |  | 6h |  | 0% |
| 219 | 1.2.1.11.3.1 | Cargar caracteristcas | 2h | 2015-03-30 15:30 | 2015-03-31 08:30 |  | 2015-04-30 09:30 | 2015-04-30 11:30 | 2h | 31.22d | Gabriel | 2h |  | 0% |
| 220 | 1.2.1.11.3.2 | Cargar HTML | 4h | 2015-03-30 15:30 | 2015-03-31 10:30 |  | 2015-04-30 11:30 | 2015-04-30 16:30 | 4h | 31d | Gabriel | 4h |  | 0% |
| 221 | 1.2.1.11.4 | **Pestaña reviews** | 0.11d | 2015-03-30 15:30 | 2015-03-30 16:30 |  | 2015-04-30 16:30 | 2015-05-04 09:30 | 0.22d | 31.33d |  | 2h |  | 0% |
| 222 | 1.2.1.11.4.1 | Cargar Reviews | 1h | 2015-03-30 15:30 | 2015-03-30 16:30 |  | 2015-04-30 16:30 | 2015-05-04 08:30 | 1h | 31.33d | Gabriel | 1h |  | 0% |
| 223 | 1.2.1.11.4.2 | Quitar parcialmente opcion de nuevo review | 1h | 2015-03-30 15:30 | 2015-03-30 16:30 |  | 2015-05-04 08:30 | 2015-05-04 09:30 | 1h | 31.33d | Gabriel | 1h |  | 0% |
| 224 | 1.2.1.11.5 | Quitar pestaña envios | 0.5h | 2015-03-30 15:30 | 2015-03-30 16:00 |  | 2015-05-04 09:30 | 2015-05-04 10:00 | 0.5h | 31.39d | Gabriel | 0.5h |  | 0% |
| 225 | 1.2.1.11.6 | Quitar pestaña price match | 0.5h | 2015-03-30 15:30 | 2015-03-30 16:00 |  | 2015-05-04 10:00 | 2015-05-04 10:30 | 0.5h | 31.39d | Gabriel | 0.5h |  | 0% |
| 226 | 1.2.1.11.7 | **Preguntas** | 0.44d | 2015-03-30 15:30 | 2015-03-31 10:30 |  | 2015-05-04 10:30 | 2015-05-05 11:30 | 1d | 31d |  | 9h |  | 0% |
| 227 | 1.2.1.11.7.1 | BD | 2h | 2015-03-30 15:30 | 2015-03-31 08:30 |  | 2015-05-04 10:30 | 2015-05-04 13:30 | 2h | 31.22d | Gabriel | 2h |  | 0% |
| 228 | 1.2.1.11.7.2 | Listar preguntas | 4h | 2015-03-30 15:30 | 2015-03-31 10:30 |  | 2015-05-04 13:30 | 2015-05-05 08:30 | 4h | 31d | Gabriel | 4h |  | 0% |
| 229 | 1.2.1.11.7.3 | Agregar preguntas | 3h | 2015-03-30 15:30 | 2015-03-31 09:30 |  | 2015-05-05 08:30 | 2015-05-05 11:30 | 3h | 31.11d | Gabriel | 3h |  | 0% |

| ID | WBS | Task | Duration | Start | Finish | Predecessors | Baseline start | Baseline finish | Baseline duration | Total slack | Resources | Work | Esperado |
| --- | --- | --- | --- | --- | --- | --- | --- | --- | --- | --- | --- | --- | --- |
| 230 | 1.2.1.12 | **Home** | 1.11d | 2015-03-30 15:30 | 2015-04-01 08:30 |  | 2015-05-05 11:30 | 2015-05-12 14:30 | 4.67d | 30.33d |  | 42h | 0% |
| 231 | 1.2.1.12.1 | Menu de categorias | 10h | 2015-03-30 15:30 | 2015-04-01 08:30 |  | 2015-05-05 11:30 | 2015-05-06 14:30 | 10h | 30.33d | Gabriel | 10h |  |
| 232 | 1.2.1.12.2 | Menu principal | 10h | 2015-03-30 15:30 | 2015-04-01 08:30 |  | 2015-05-06 14:30 | 2015-05-07 16:30 | 10h | 30.33d | Gabriel | 10h |  |
| 233 | 1.2.1.12.3 | Ajustes generales | 4h | 2015-03-30 15:30 | 2015-03-31 10:30 |  | 2015-05-07 16:30 | 2015-05-08 11:30 | 4h | 31d | Gabriel | 4h |  |
| 234 | 1.2.1.12.4 | Revision de Buscador | 10h | 2015-03-30 15:30 | 2015-04-01 08:30 |  | 2015-05-08 11:30 | 2015-05-11 14:30 | 10h | 30.33d | Gabriel | 10h |  |
| 235 | 1.2.1.12.5 | Eliminación funcionalidades innecesarias | 4h | 2015-03-30 15:30 | 2015-03-31 10:30 |  | 2015-05-11 14:30 | 2015-05-12 09:30 | 4h | 31d | Gabriel | 4h |  |
| 236 | 1.2.1.12.6 | Pruebas unitarias | 4h | 2015-03-30 15:30 | 2015-03-31 10:30 |  | 2015-05-12 09:30 | 2015-05-12 14:30 | 4h | 31d | Gabriel | 4h |  |
| 237 | 1.2.1.13 | Mapa del sitio | 2h | 2015-03-30 15:30 | 2015-03-31 08:30 |  | 2015-06-10 15:30 | 2015-06-11 08:30 | 2h | 31.22d | Gabriel | 2h | 0% |
| 238 | 1.2.1.14 | Condiciones de uso | 1h | 2015-03-30 15:30 | 2015-03-30 16:30 |  | 2015-06-11 08:30 | 2015-06-11 09:30 | 1h | 31.33d | Gabriel | 1h | 0% |
| 239 | 1.2.1.15 | Contacto | 4h | 2015-03-30 15:30 | 2015-03-31 10:30 |  | 2015-06-11 09:30 | 2015-06-11 14:30 | 4h | 31d | Gabriel | 4h | 0% |
| 240 | 1.2.1.16 | Acerca de nosotros | 2h | 2015-03-30 15:30 | 2015-03-31 08:30 |  | 2015-06-11 14:30 | 2015-06-11 16:30 | 2h | 31.22d | Gabriel | 2h | 0% |
| 241 | 1.2.1.17 | Ajustes adicionales | 27h | 2015-03-30 15:30 | 2015-04-07 09:30 |  | 2015-06-11 16:30 | 2015-06-18 10:30 | 27h | 28.44d | Gabriel | 27h | 0% |
| 242 | 1.2.2 | **Diseño Web** | 31.44d | 2015-03-30 15:30 | 2015-05-25 09:30 |  | 2015-03-27 15:30 | 2015-05-22 09:30 | 31.44d | 0d |  | 283h | 0% |
| 243 | 1.2.2.1 | Visuales | 9h | 2015-03-30 15:30 | 2015-03-31 16:30 |  | 2015-03-27 15:30 | 2015-03-30 16:30 | 9h | 0d | Julian | 9h |  |
| 244 | 1.2.2.2 | Home | 9h | 2015-03-31 16:30 | 2015-04-06 08:30 | 243 | 2015-03-30 16:30 | 2015-04-01 08:30 | 9h | 0d | Julian | 9h |  |
| 245 | 1.2.2.3 | **Panel de Control** | 16.44d | 2015-04-06 08:30 | 2015-04-30 13:30 | 244 | 2015-04-01 08:30 | 2015-04-29 13:30 | 16.44d | 0d |  | 148h |  |
| 246 | 1.2.2.3.1 | **Publicacion Producto** | 3.11d | 2015-04-06 08:30 | 2015-04-09 13:30 |  | 2015-04-09 08:30 | 2015-04-14 13:30 | 3.11d | 0d |  | 28h |  |
| 247 | 1.2.2.3.1.1 | Paso1 | 0.44d | 2015-04-06 08:30 | 2015-04-06 13:30 |  | 2015-04-09 08:30 | 2015-04-09 13:30 | 0.44d | 0d | Julian | 4h |  |
| 248 | 1.2.2.3.1.2 | Paso2 | 0.89d | 2015-04-06 13:30 | 2015-04-07 13:30 | 247 | 2015-04-09 13:30 | 2015-04-10 13:30 | 0.89d | 0d | Julian | 8h |  |
| 249 | 1.2.2.3.1.3 | Paso3 | 0.89d | 2015-04-07 13:30 | 2015-04-08 13:30 | 248 | 2015-04-10 13:30 | 2015-04-13 13:30 | 0.89d | 0d | Julian | 8h |  |
| 250 | 1.2.2.3.1.4 | Paso4 | 0.89d | 2015-04-08 13:30 | 2015-04-09 13:30 | 249 | 2015-04-13 13:30 | 2015-04-14 13:30 | 0.89d | 0d | Julian | 8h |  |
| 251 | 1.2.2.3.2 | Home Panel De Control | 0.89d | 2015-04-09 13:30 | 2015-04-10 13:30 | 246 | 2015-04-01 08:30 | 2015-04-06 08:30 | 0.89d | 0d | Julian | 8h |  |
| 252 | 1.2.2.3.3 | **Publicacion Moto** | 3.56d | 2015-04-10 13:30 | 2015-04-16 13:30 | 251 | 2015-04-14 13:30 | 2015-04-20 13:30 | 3.56d | 0d |  | 32h |  |
| 253 | 1.2.2.3.3.1 | Paso1 | 0.89d | 2015-04-10 13:30 | 2015-04-13 13:30 |  | 2015-04-14 13:30 | 2015-04-15 13:30 | 0.89d | 0d | Julian | 8h |  |
| 254 | 1.2.2.3.3.2 | Paso2 | 0.89d | 2015-04-13 13:30 | 2015-04-14 13:30 | 253 | 2015-04-15 13:30 | 2015-04-16 13:30 | 0.89d | 0d | Julian | 8h |  |
| 255 | 1.2.2.3.3.3 | Paso3 | 0.89d | 2015-04-14 13:30 | 2015-04-15 13:30 | 254 | 2015-04-16 13:30 | 2015-04-17 13:30 | 0.89d | 0d | Julian | 8h |  |
| 256 | 1.2.2.3.3.4 | Paso4 | 0.89d | 2015-04-15 13:30 | 2015-04-16 13:30 | 255 | 2015-04-17 13:30 | 2015-04-20 13:30 | 0.89d | 0d | Julian | 8h |  |
| 257 | 1.2.2.3.4 | Actualizacion de datos | 0.89d | 2015-04-16 13:30 | 2015-04-17 13:30 | 252 | 2015-04-06 08:30 | 2015-04-07 08:30 | 0.89d | 0d | Julian | 8h |  |
| 258 | 1.2.2.3.5 | Cambiar Clave | 0.89d | 2015-04-17 13:30 | 2015-04-20 13:30 | 257 | 2015-04-07 08:30 | 2015-04-08 08:30 | 0.89d | 0d | Julian | 8h |  |
| 259 | 1.2.2.3.6 | Seleccionar tipo de producto | 0.89d | 2015-04-20 13:30 | 2015-04-21 13:30 | 258 | 2015-04-08 08:30 | 2015-04-09 08:30 | 0.89d | 0d | Julian | 8h |  |
| 260 | 1.2.2.3.7 | Mensajes Recibidos | 0.89d | 2015-04-21 13:30 | 2015-04-22 13:30 | 259 | 2015-04-20 13:30 | 2015-04-21 13:30 | 0.89d | 0d | Julian | 8h |  |
| 261 | 1.2.2.3.8 | Mis Compras | 0.89d | 2015-04-22 13:30 | 2015-04-23 13:30 | 260 | 2015-04-21 13:30 | 2015-04-22 13:30 | 0.89d | 0d | Julian | 8h |  |
| 262 | 1.2.2.3.9 | Calificar | 0.89d | 2015-04-23 13:30 | 2015-04-24 13:30 | 261 | 2015-04-22 13:30 | 2015-04-23 13:30 | 0.89d | 0d | Julian | 8h |  |
| 263 | 1.2.2.3.10 | Mis Ventas | 0.89d | 2015-04-24 13:30 | 2015-04-27 13:30 | 262 | 2015-04-23 13:30 | 2015-04-24 13:30 | 0.89d | 0d | Julian | 8h |  |
| 264 | 1.2.2.3.11 | Mis Productos | 0.89d | 2015-04-27 13:30 | 2015-04-28 13:30 | 263 | 2015-04-24 13:30 | 2015-04-27 13:30 | 0.89d | 0d | Julian | 8h |  |
| 265 | 1.2.2.3.12 | Responder Preguntas | 0.89d | 2015-04-28 13:30 | 2015-04-29 13:30 | 264 | 2015-04-27 13:30 | 2015-04-28 13:30 | 0.89d | 0d | Julian | 8h |  |
| 266 | 1.2.2.3.13 | Mis Datos | 0.89d | 2015-04-29 13:30 | 2015-04-30 13:30 | 265 | 2015-04-28 13:30 | 2015-04-29 13:30 | 0.89d | 0d | Julian | 8h |  |
| 267 | 1.2.2.4 | Registro | 9h | 2015-04-30 13:30 | 2015-05-04 14:30 | 245 | 2015-04-29 13:30 | 2015-04-30 14:30 | 9h | 0d | Julian | 9h |  |
| 268 | 1.2.2.5 | Autenticacion | 9h | 2015-05-04 14:30 | 2015-05-05 15:30 | 267 | 2015-04-30 14:30 | 2015-05-04 15:30 | 9h | 0d | Julian | 9h |  |
| 269 | 1.2.2.6 | Recordar Clave | 9h | 2015-05-05 15:30 | 2015-05-06 16:30 | 268 | 2015-05-04 15:30 | 2015-05-05 16:30 | 9h | 0d | Julian | 9h |  |
| 270 | 1.2.2.7 | Listado de productos | 9h | 2015-05-06 16:30 | 2015-05-08 08:30 | 269 | 2015-05-05 16:30 | 2015-05-07 08:30 | 9h | 0d | Julian | 9h |  |
| 271 | 1.2.2.8 | Detalle del producto | 1d | 2015-05-08 08:30 | 2015-05-11 09:30 | 270 | 2015-05-07 08:30 | 2015-05-08 09:30 | 1d | 0d | Julian | 9h |  |
| 272 | 1.2.2.9 | Detalle vendedor usuario | 1d | 2015-05-11 09:30 | 2015-05-12 10:30 | 271 | 2015-05-08 09:30 | 2015-05-11 10:30 | 1d | 0d | Julian | 9h |  |
| 273 | 1.2.2.10 | Preguntar a Vendedor | 1d | 2015-05-12 10:30 | 2015-05-13 11:30 | 272 | 2015-05-11 10:30 | 2015-05-12 11:30 | 1d | 0d | Julian | 9h |  |
| 274 | 1.2.2.11 | Panel de notificaciones | 1d | 2015-05-13 11:30 | 2015-05-14 13:30 | 273 | 2015-05-12 11:30 | 2015-05-13 13:30 | 1d | 0d | Julian | 9h |  |
| 275 | 1.2.2.12 | Newsletter | 1d | 2015-05-14 13:30 | 2015-05-15 14:30 | 274 | 2015-05-13 13:30 | 2015-05-14 14:30 | 1d | 0d | Julian | 9h |  |
| 276 | 1.2.2.13 | Mapa del sitio | 1d | 2015-05-15 14:30 | 2015-05-19 15:30 | 275 | 2015-05-14 14:30 | 2015-05-15 15:30 | 1d | 0d | Julian | 9h |  |
| 277 | 1.2.2.14 | Condiciones de uso | 1d | 2015-05-19 15:30 | 2015-05-20 16:30 | 276 | 2015-05-15 15:30 | 2015-05-19 16:30 | 1d | 0d | Julian | 9h |  |
| 278 | 1.2.2.15 | Contacto | 1d | 2015-05-20 16:30 | 2015-05-22 08:30 | 277 | 2015-05-19 16:30 | 2015-05-21 08:30 | 1d | 0d | Julian | 9h |  |
| 279 | 1.2.2.16 | Acerca de nosotros | 1d | 2015-05-22 08:30 | 2015-05-25 09:30 | 278 | 2015-05-21 08:30 | 2015-05-22 09:30 | 1d | 0d | Julian | 9h |  |

| ID | WBS | Task | Duration | Start | Finish | Baseline start | Baseline finish | Baseline duration | Total slack | Resources | Work | Esperado |
| --- | --- | --- | --- | --- | --- | --- | --- | --- | --- | --- | --- | --- |
| 280 | 1.2.3 | **Pruebas** | 3d | 2015-03-30 15:30 | 2015-04-07 09:30 | 2015-06-11 16:30 | 2015-06-30 08:30 | 9d | 28.44d |  | 81h | 0% |
| 281 | 1.2.3.1 | Pruebas Generales | 3d | 2015-03-30 15:30 | 2015-04-07 09:30 | 2015-06-11 16:30 | 2015-06-18 10:30 | 3d | 28.44d | Julian | 27h |  |
| 282 | 1.2.3.2 | Correciones | 3d | 2015-03-30 15:30 | 2015-04-07 09:30 | 2015-06-18 10:30 | 2015-06-23 14:30 | 3d | 28.44d | Gabriel | 27h |  |
| 283 | 1.2.3.3 | Primeras visitas cliente | 3d | 2015-03-30 15:30 | 2015-04-07 09:30 | 2015-06-23 14:30 | 2015-06-30 08:30 | 3d | 28.44d | Gabriel | 27h |  |
| 284 | 1.3 | **Fase 2 (Tienda)** | 2.67d | 2015-03-24 08:00 | 2015-03-26 17:00 | 2015-06-30 08:30 | 2015-07-23 09:30 | 14.33d | 33.06d |  | 100h | 0% |
| 285 | 1.3.1 | **Desarrollo** | 0.56d | 2015-03-24 08:00 | 2015-03-24 14:00 | 2015-06-30 08:30 | 2015-07-14 09:30 | 9d | 35.17d |  | 28h |  |
| 286 | 1.3.1.1 | **Detalle del Vendedor (Usuario)** | 0.56d | 2015-03-24 08:00 | 2015-03-24 14:00 | 2015-05-20 09:30 | 2015-05-22 16:30 | 2.44d | 35.17d |  | 22h | 0% |
| 287 | 1.3.1.1.1 | Acceso a datos | 4h | 2015-03-24 08:00 | 2015-03-24 12:00 | 2015-05-20 09:30 | 2015-05-20 14:30 | 4h | 35.28d | Gabriel | 4h |  |
| 288 | 1.3.1.1.2 | Informacion Básica | 3h | 2015-03-24 08:00 | 2015-03-24 11:00 | 2015-05-20 14:30 | 2015-05-21 08:30 | 3h | 35.39d | Gabriel | 3h |  |
| 289 | 1.3.1.1.3 | Comentarios Recibidos | 3h | 2015-03-24 08:00 | 2015-03-24 11:00 | 2015-05-21 08:30 | 2015-05-21 11:30 | 3h | 35.39d | Gabriel | 3h |  |
| 290 | 1.3.1.1.4 | Enviar mensaje prviado | 5h | 2015-03-24 08:00 | 2015-03-24 14:00 | 2015-05-21 11:30 | 2015-05-22 08:30 | 5h | 35.17d | Gabriel | 5h |  |
| 291 | 1.3.1.1.5 | Contar experiencia | 5h | 2015-03-24 08:00 | 2015-03-24 14:00 | 2015-05-22 08:30 | 2015-05-22 14:30 | 5h | 35.17d | Gabriel | 5h |  |
| 292 | 1.3.1.1.6 | Enviar correos de notificación | 2h | 2015-03-24 08:00 | 2015-03-24 10:00 | 2015-05-22 14:30 | 2015-05-22 16:30 | 2h | 35.5d | Gabriel | 2h |  |
| 293 | 1.3.1.2 | **Categorias** | 0.33d | 2015-03-24 08:00 | 2015-03-24 11:00 | 2015-06-30 08:30 | 2015-06-30 15:30 | 0.67d | 35.39d |  | 6h |  |
| 294 | 1.3.1.2.1 | Revision de funcionalidad correcta | 3h | 2015-03-24 08:00 | 2015-03-24 11:00 | 2015-06-30 08:30 | 2015-06-30 11:30 | 3h | 35.39d | Gabriel | 3h |  |
| 295 | 1.3.1.2.2 | Pruebas unitarias | 3h | 2015-03-24 08:00 | 2015-03-24 11:00 | 2015-06-30 11:30 | 2015-06-30 15:30 | 3h | 35.39d | Gabriel | 3h |  |
| 296 | 1.3.2 | **Diseño Web** | 0.89d | 2015-03-24 08:00 | 2015-03-24 17:00 | 2015-06-30 08:30 | 2015-07-03 08:30 | 2.67d | 34.83d |  | 24h |  |
| 297 | 1.3.2.1 | Categorias | 0.89d | 2015-03-24 08:00 | 2015-03-24 17:00 | 2015-06-30 08:30 | 2015-07-01 08:30 | 0.89d | 34.83d | Julian | 8h |  |
| 298 | 1.3.2.2 | Detalle Tienda | 0.89d | 2015-03-24 08:00 | 2015-03-24 17:00 | 2015-07-01 08:30 | 2015-07-02 08:30 | 0.89d | 34.83d | Julian | 8h |  |
| 299 | 1.3.2.3 | Actualizacion de Tienda | 0.89d | 2015-03-24 08:00 | 2015-03-24 17:00 | 2015-07-02 08:30 | 2015-07-03 08:30 | 0.89d | 34.83d | Julian | 8h |  |
| 300 | 1.3.3 | Pruebas Generales | 2.67d | 2015-03-24 08:00 | 2015-03-26 17:00 | 2015-07-14 09:30 | 2015-07-17 09:30 | 2.67d | 33.06d | Julian | 24h |  |
| 301 | 1.3.4 | Correciones | 2.67d | 2015-03-24 08:00 | 2015-03-26 17:00 | 2015-07-17 09:30 | 2015-07-23 09:30 | 2.67d | 33.06d | Gabriel | 24h |  |
| 302 | 1.4 | **Fase 3 (Cotizaciones)** | 2.67d | 2015-03-24 08:00 | 2015-03-26 17:00 | 2015-07-23 09:30 | 2015-08-26 16:00 | 20.17d | 33.06d |  | 200.5h | 0% |
| 303 | 1.4.1 | **Desarrollo** | 0.56d | 2015-03-24 08:00 | 2015-03-24 14:00 | 2015-07-23 09:30 | 2015-08-18 16:00 | 14.83d | 35.17d |  | 88.5h |  |
| 304 | 1.4.1.1 | **Publicar Cotizacion** | 0.44d | 2015-03-24 08:00 | 2015-03-24 12:00 | 2015-07-30 15:30 | 2015-08-04 10:00 | 2.17d | 35.28d |  | 19.5h |  |
| 305 | 1.4.1.1.1 | BD | 3h | 2015-03-24 08:00 | 2015-03-24 11:00 | 2015-07-30 15:30 | 2015-07-31 09:30 | 3h | 35.39d | Gabriel | 3h |  |
| 306 | 1.4.1.1.2 | Datos basicos | 3h | 2015-03-24 08:00 | 2015-03-24 11:00 | 2015-07-31 09:30 | 2015-07-31 13:30 | 3h | 35.39d | Gabriel | 3h |  |
| 307 | 1.4.1.1.3 | Cambiar ubicacion | 2h | 2015-03-24 08:00 | 2015-03-24 10:00 | 2015-07-31 13:30 | 2015-07-31 15:30 | 2h | 35.5d | Gabriel | 2h |  |
| 308 | 1.4.1.1.4 | Cambiar moto | 3h | 2015-03-24 08:00 | 2015-03-24 11:00 | 2015-07-31 15:30 | 2015-08-03 09:30 | 3h | 35.39d | Gabriel | 3h |  |
| 309 | 1.4.1.1.5 | Cargar posibles problemas | 4h | 2015-03-24 08:00 | 2015-03-24 12:00 | 2015-08-03 09:30 | 2015-08-03 14:30 | 4h | 35.28d | Gabriel | 4h |  |
| 310 | 1.4.1.1.6 | Cargar imagenes | 1.5h | 2015-03-24 08:00 | 2015-03-24 09:30 | 2015-08-03 14:30 | 2015-08-03 16:00 | 1.5h | 35.56d | Gabriel | 1.5h |  |
| 311 | 1.4.1.1.7 | Pruebas unitarias | 3h | 2015-03-24 08:00 | 2015-03-24 11:00 | 2015-08-03 16:00 | 2015-08-04 10:00 | 3h | 35.39d | Gabriel | 3h |  |

| ID | WBS | Task | Duration | Start | Finish | Baseline start | Baseline finish | Baseline duration | Total slack | Resources | Work |
| --- | --- | --- | --- | --- | --- | --- | --- | --- | --- | --- | --- |
| 312 | 1.4.1.2 | **Mis Cotizaciones (Taller)** | 0.56d | 2015-03-24 08:00 | 2015-03-24 14:00 | 2015-08-04 10:00 | 2015-08-06 11:00 | 1.89d | 35.17d |  | 17h |
| 313 | 1.4.1.2.1 | Mostrar indicadores | 3h | 2015-03-24 08:00 | 2015-03-24 11:00 | 2015-08-04 10:00 | 2015-08-04 14:00 | 3h | 35.39d | Gabriel | 3h |
| 314 | 1.4.1.2.2 | Cargar filtros | 5h | 2015-03-24 08:00 | 2015-03-24 14:00 | 2015-08-04 14:00 | 2015-08-05 10:00 | 5h | 35.17d | Gabriel | 5h |
| 315 | 1.4.1.2.3 | Listado de cotizaciones | 3h | 2015-03-24 08:00 | 2015-03-24 11:00 | 2015-08-05 10:00 | 2015-08-05 14:00 | 3h | 35.39d | Gabriel | 3h |
| 316 | 1.4.1.2.4 | Paginacion | 2h | 2015-03-24 08:00 | 2015-03-24 10:00 | 2015-08-05 14:00 | 2015-08-05 16:00 | 2h | 35.5d | Gabriel | 2h |
| 317 | 1.4.1.2.5 | BD | 2h | 2015-03-24 08:00 | 2015-03-24 10:00 | 2015-08-05 16:00 | 2015-08-06 09:00 | 2h | 35.5d | Gabriel | 2h |
| 318 | 1.4.1.2.6 | Pruebas unitarias | 2h | 2015-03-24 08:00 | 2015-03-24 10:00 | 2015-08-06 09:00 | 2015-08-06 11:00 | 2h | 35.5d | Gabriel | 2h |
| 319 | 1.4.1.3 | **Detalle Cotizacion(Taller)** | 0.44d | 2015-03-24 08:00 | 2015-03-24 12:00 | 2015-08-06 11:00 | 2015-08-11 14:00 | 2d | 35.28d |  | 18h |
| 320 | 1.4.1.3.1 | BD | 3h | 2015-03-24 08:00 | 2015-03-24 11:00 | 2015-08-06 11:00 | 2015-08-06 15:00 | 3h | 35.39d | Gabriel | 3h |
| 321 | 1.4.1.3.2 | Indicadores | 2h | 2015-03-24 08:00 | 2015-03-24 10:00 | 2015-08-06 15:00 | 2015-08-06 17:00 | 2h | 35.5d | Gabriel | 2h |
| 322 | 1.4.1.3.3 | Informacion de la solciitud | 3h | 2015-03-24 08:00 | 2015-03-24 11:00 | 2015-08-10 08:00 | 2015-08-10 11:00 | 3h | 35.39d | Gabriel | 3h |
| 323 | 1.4.1.3.4 | Imagenes | 2h | 2015-03-24 08:00 | 2015-03-24 10:00 | 2015-08-10 11:00 | 2015-08-10 14:00 | 2h | 35.5d | Gabriel | 2h |
| 324 | 1.4.1.3.5 | **Propuesta** | 0.33d | 2015-03-24 08:00 | 2015-03-24 11:00 | 2015-08-10 14:00 | 2015-08-11 09:00 | 0.44d | 35.39d |  | 4h |
| 325 | 1.4.1.3.5.1 | Datos basicos | 1h | 2015-03-24 08:00 | 2015-03-24 09:00 | 2015-08-10 14:00 | 2015-08-10 15:00 | 1h | 35.61d | Gabriel | 1h |
| 326 | 1.4.1.3.5.2 | Responder | 3h | 2015-03-24 08:00 | 2015-03-24 11:00 | 2015-08-10 15:00 | 2015-08-11 09:00 | 3h | 35.39d | Gabriel | 3h |
| 327 | 1.4.1.3.6 | Mensajes anteriores | 4h | 2015-03-24 08:00 | 2015-03-24 12:00 | 2015-08-11 09:00 | 2015-08-11 14:00 | 4h | 35.28d | Gabriel | 4h |
| 328 | 1.4.1.4 | **Mis Cotizaciones(Persona)** | 0.44d | 2015-03-24 08:00 | 2015-03-24 12:00 | 2015-08-11 14:00 | 2015-08-13 11:00 | 1.56d | 35.28d |  | 14h |
| 329 | 1.4.1.4.1 | BD | 2h | 2015-03-24 08:00 | 2015-03-24 10:00 | 2015-08-11 14:00 | 2015-08-11 16:00 | 2h | 35.5d | Gabriel | 2h |
| 330 | 1.4.1.4.2 | Indicadores | 2h | 2015-03-24 08:00 | 2015-03-24 10:00 | 2015-08-11 16:00 | 2015-08-12 09:00 | 2h | 35.5d | Gabriel | 2h |
| 331 | 1.4.1.4.3 | Filtro | 2h | 2015-03-24 08:00 | 2015-03-24 10:00 | 2015-08-12 09:00 | 2015-08-12 11:00 | 2h | 35.5d | Gabriel | 2h |
| 332 | 1.4.1.4.4 | Listado de propuestas | 4h | 2015-03-24 08:00 | 2015-03-24 12:00 | 2015-08-12 11:00 | 2015-08-12 16:00 | 4h | 35.28d | Gabriel | 4h |
| 333 | 1.4.1.4.5 | Paginacion | 2h | 2015-03-24 08:00 | 2015-03-24 10:00 | 2015-08-12 16:00 | 2015-08-13 09:00 | 2h | 35.5d | Gabriel | 2h |
| 334 | 1.4.1.4.6 | Pruebas unitarias | 2h | 2015-03-24 08:00 | 2015-03-24 10:00 | 2015-08-13 09:00 | 2015-08-13 11:00 | 2h | 35.5d | Gabriel | 2h |
| 335 | 1.4.1.5 | **Detalle Cotizacion(Persona)** | 0.44d | 2015-03-24 08:00 | 2015-03-24 12:00 | 2015-08-13 11:00 | 2015-08-18 16:00 | 2.22d | 35.28d |  | 20h |
| 336 | 1.4.1.5.1 | BD | 3h | 2015-03-24 08:00 | 2015-03-24 11:00 | 2015-08-13 11:00 | 2015-08-13 15:00 | 3h | 35.39d | Gabriel | 3h |
| 337 | 1.4.1.5.2 | Detalle de la solicitud | 2h | 2015-03-24 08:00 | 2015-03-24 10:00 | 2015-08-13 15:00 | 2015-08-13 17:00 | 2h | 35.5d | Gabriel | 2h |
| 338 | 1.4.1.5.3 | Listado de propuestas | 4h | 2015-03-24 08:00 | 2015-03-24 12:00 | 2015-08-14 08:00 | 2015-08-14 12:00 | 4h | 35.28d | Gabriel | 4h |
| 339 | 1.4.1.5.4 | Detalle de propuesta | 3h | 2015-03-24 08:00 | 2015-03-24 11:00 | 2015-08-14 13:00 | 2015-08-14 16:00 | 3h | 35.39d | Gabriel | 3h |
| 340 | 1.4.1.5.5 | Aceptar/Rechazar propiesta | 2h | 2015-03-24 08:00 | 2015-03-24 10:00 | 2015-08-14 16:00 | 2015-08-18 09:00 | 2h | 35.5d | Gabriel | 2h |
| 341 | 1.4.1.5.6 | Responder mensajes | 3h | 2015-03-24 08:00 | 2015-03-24 11:00 | 2015-08-18 09:00 | 2015-08-18 12:00 | 3h | 35.39d | Gabriel | 3h |
| 342 | 1.4.1.5.7 | Pruebas unitarias | 3h | 2015-03-24 08:00 | 2015-03-24 11:00 | 2015-08-18 13:00 | 2015-08-18 16:00 | 3h | 35.39d | Gabriel | 3h |

| ID | WBS | Task | Duration | Start | Finish | Baseline start | Baseline finish | Baseline duration | Total slack | Resources | Work |
| --- | --- | --- | --- | --- | --- | --- | --- | --- | --- | --- | --- |
| 343 | 1.4.2 | **Diseño Web** | 0.89d | 2015-03-24 08:00 | 2015-03-24 17:00 | 2015-07-23 09:30 | 2015-08-04 09:30 | 7.11d | 34.83d |  | 64h |
| 344 | 1.4.2.1 | **Publicacion Servicio** | 0.89d | 2015-03-24 08:00 | 2015-03-24 17:00 | 2015-07-23 09:30 | 2015-07-28 09:30 | 2.67d | 34.83d |  | 24h |
| 345 | 1.4.2.1.1 | Paso1 | 0.89d | 2015-03-24 08:00 | 2015-03-24 17:00 | 2015-07-23 09:30 | 2015-07-24 09:30 | 0.89d | 34.83d | Julian | 8h |
| 346 | 1.4.2.1.2 | Paso2 | 0.89d | 2015-03-24 08:00 | 2015-03-24 17:00 | 2015-07-24 09:30 | 2015-07-27 09:30 | 0.89d | 34.83d | Julian | 8h |
| 347 | 1.4.2.1.3 | Paso3 | 0.89d | 2015-03-24 08:00 | 2015-03-24 17:00 | 2015-07-27 09:30 | 2015-07-28 09:30 | 0.89d | 34.83d | Julian | 8h |
| 348 | 1.4.2.2 | Publicar Cotizacion | 0.89d | 2015-03-24 08:00 | 2015-03-24 17:00 | 2015-07-28 09:30 | 2015-07-29 09:30 | 0.89d | 34.83d | Julian | 8h |
| 349 | 1.4.2.3 | Mis Cotizaciones (Taller) | 0.89d | 2015-03-24 08:00 | 2015-03-24 17:00 | 2015-07-29 09:30 | 2015-07-30 09:30 | 0.89d | 34.83d | Julian | 8h |
| 350 | 1.4.2.4 | Detalle Cotizacion(Taller) | 0.89d | 2015-03-24 08:00 | 2015-03-24 17:00 | 2015-07-30 09:30 | 2015-07-31 09:30 | 0.89d | 34.83d | Julian | 8h |
| 351 | 1.4.2.5 | Mis Cotizaciones(Persona) | 0.89d | 2015-03-24 08:00 | 2015-03-24 17:00 | 2015-07-31 09:30 | 2015-08-03 09:30 | 0.89d | 34.83d | Julian | 8h |
| 352 | 1.4.2.6 | Detalle Cotizacion(Persona) | 0.89d | 2015-03-24 08:00 | 2015-03-24 17:00 | 2015-08-03 09:30 | 2015-08-04 09:30 | 0.89d | 34.83d | Julian | 8h |
| 353 | 1.4.3 | Pruebas Generales | 2.67d | 2015-03-24 08:00 | 2015-03-26 17:00 | 2015-08-18 16:00 | 2015-08-21 16:00 | 2.67d | 33.06d | Julian | 24h |
| 354 | 1.4.4 | Correciones | 2.67d | 2015-03-24 08:00 | 2015-03-26 17:00 | 2015-08-21 16:00 | 2015-08-26 16:00 | 2.67d | 33.06d | Gabriel | 24h |
