# CronogramaAjustado

Schedule from MS Project, 2015-03-26 to 2015-08-11, 9 hours a day, A marks actual dates.

## Calendars

- Standard: Mon-Fri 08:00-12:00, 13:00-17:00; Sat-Sun off.

## Resources

| Resource |
| --- |
| Gabriel |
| Julian |

## Schedule

| ID | WBS | Task | Duration | Start | Finish | Predecessors | Complete | Remaining | Total slack | Free slack | Resources | Work | Actual work |
| --- | --- | --- | --- | --- | --- | --- | --- | --- | --- | --- | --- | --- | --- |
| 1 | 1 | **Tuils Proyecto** | 3.56d | 2015-03-26 08:00 A | 2015-03-31 17:00 |  | 25% | 2.68d |  |  |  | 1144.44h | 284.8h |
| 2 | 1.1 | **Inicio** | 2.5d | 2015-03-26 08:00 A | 2015-03-30 15:30 A |  | 100% |  |  |  |  | 22.5h | 22.5h |
| 3 | 1.1.1 | **Configurar ambiente Inicial** | 1.5d | 2015-03-26 08:00 A | 2015-03-27 14:30 A |  | 100% |  |  |  |  | 13.5h | 13.5h |
| 4 | 1.1.1.1 | Configurar estructura github | 1.5h | 2015-03-26 08:00 A | 2015-03-26 09:30 A |  | 100% |  |  |  | Gabriel | 1.5h | 1.5h |
| 5 | 1.1.1.2 | Configurar solución | 4h | 2015-03-26 09:30 A | 2015-03-26 14:30 A | 4 | 100% |  |  |  | Gabriel | 4h | 4h |
| 6 | 1.1.1.3 | Crear BD | 1h | 2015-03-26 14:30 A | 2015-03-26 15:30 A | 5 | 100% |  |  |  | Gabriel | 1h | 1h |
| 7 | 1.1.1.4 | Agregar proyecto a Github | 4h | 2015-03-26 15:30 A | 2015-03-27 10:30 A | 6 | 100% |  |  |  | Gabriel | 4h | 4h |
| 8 | 1.1.1.5 | Configurar idioma Español | 3h | 2015-03-27 10:30 A | 2015-03-27 14:30 A | 7 | 100% |  |  |  | Gabriel | 3h | 3h |
| 9 | 1.1.2 | **Diseño** | 1d | 2015-03-27 14:30 A | 2015-03-30 15:30 A | 3 | 100% |  |  |  |  | 9h | 9h |
| 10 | 1.1.2.1 | Diseño de BD | 9h | 2015-03-27 14:30 A | 2015-03-30 15:30 A |  | 100% |  |  |  | Gabriel | 9h | 9h |
| 11 | 1.2 | **Fase 1 (Ventas)** | 64.89d | 2015-03-30 15:30 A | 2015-07-09 15:30 | 2 | 31% | 44.67d | -22d | 0d |  | 841.68h | 262.3h |
| 12 | 1.2.1 | **Desarrollo** | 56.89d | 2015-03-30 15:30 A | 2015-06-26 15:30 |  | 51% | 27.74d | -14d | 0d |  | 512h | 262.3h |
| 13 | 1.2.1.1 | **Publicacion Producto** | 8.89d | 2015-03-30 15:30 A | 2015-04-13 15:30 A |  | 100% |  |  |  |  | 80h | 80h |
| 14 | 1.2.1.1.1 | **Paso1 (Seleccionar Categoria)** | 2.44d | 2015-03-30 15:30 A | 2015-04-02 13:30 A |  | 100% |  |  |  |  | 22h | 22h |
| 15 | 1.2.1.1.1.1 | Ajustes de BD | 2h | 2015-03-30 15:30 A | 2015-03-31 08:30 A |  | 100% |  |  |  | Gabriel | 2h | 2h |
| 16 | 1.2.1.1.1.2 | Menú Superior Tipo Producto | 2h | 2015-03-31 08:30 A | 2015-03-31 10:30 A | 15 | 100% |  |  |  | Gabriel | 2h | 2h |
| 17 | 1.2.1.1.1.3 | Paso actual en el proceso | 2h | 2015-03-31 10:30 A | 2015-03-31 13:30 A | 16 | 100% |  |  |  | Gabriel | 2h | 2h |
| 18 | 1.2.1.1.1.4 | **Seleccion de Categorias** | 1.44d | 2015-03-31 13:30 A | 2015-04-02 09:30 A | 17 | 100% |  |  |  |  | 13h | 13h |
| 19 | 1.2.1.1.1.4.1 | Acceso a Datos | 3h | 2015-03-31 13:30 A | 2015-03-31 16:30 A |  | 100% |  |  |  | Gabriel | 3h | 3h |
| 20 | 1.2.1.1.1.4.2 | Filtro por seleccion | 3h | 2015-03-31 16:30 A | 2015-04-01 10:30 A | 19 | 100% |  |  |  | Gabriel | 3h | 3h |
| 21 | 1.2.1.1.1.4.3 | Filtro por texto | 3h | 2015-04-01 10:30 A | 2015-04-01 14:30 A | 20 | 100% |  |  |  | Gabriel | 3h | 3h |
| 22 | 1.2.1.1.1.4.4 | Ultimo seleccionado | 2h | 2015-04-01 14:30 A | 2015-04-01 16:30 A | 21 | 100% |  |  |  | Gabriel | 2h | 2h |
| 23 | 1.2.1.1.1.4.5 | Guardar | 2h | 2015-04-01 16:30 A | 2015-04-02 09:30 A | 22 | 100% |  |  |  | Gabriel | 2h | 2h |
| 24 | 1.2.1.1.1.5 | Pruebas Unitarias | 3h | 2015-04-02 09:30 A | 2015-04-02 13:30 A | 18 | 100% |  |  |  | Gabriel | 3h | 3h |

| ID | WBS | Task | Duration | Start | Finish | Predecessors | Complete | Resources | Work | Actual work |
| --- | --- | --- | --- | --- | --- | --- | --- | --- | --- | --- |
| 25 | 1.2.1.1.2 | **Paso2 (Detalle Producto)** | 2.56d | 2015-04-02 13:30 A | 2015-04-07 11:30 A | 14 | 100% |  | 23h | 23h |
| 26 | 1.2.1.1.2.1 | Menu tipo producto | 1h | 2015-04-02 13:30 A | 2015-04-02 14:30 A |  | 100% | Gabriel | 1h | 1h |
| 27 | 1.2.1.1.2.2 | Menu numero de paso | 1h | 2015-04-02 14:30 A | 2015-04-02 15:30 A | 26 | 100% | Gabriel | 1h | 1h |
| 28 | 1.2.1.1.2.3 | Acceso a datos | 2h | 2015-04-02 15:30 A | 2015-04-03 08:30 A | 27 | 100% | Gabriel | 2h | 2h |
| 29 | 1.2.1.1.2.4 | Datos básicos producto | 1h | 2015-04-03 08:30 A | 2015-04-03 09:30 A | 28 | 100% | Gabriel | 1h | 1h |
| 30 | 1.2.1.1.2.5 | Seleccionar tipo de moto | 5h | 2015-04-03 09:30 A | 2015-04-03 15:30 A | 29 | 100% | Gabriel | 5h | 5h |
| 31 | 1.2.1.1.2.6 | Datos de envío | 3h | 2015-04-03 15:30 A | 2015-04-06 09:30 A | 30 | 100% | Gabriel | 3h | 3h |
| 32 | 1.2.1.1.2.7 | Editor HTML | 6h | 2015-04-06 09:30 A | 2015-04-06 16:30 A | 31 | 100% | Gabriel | 6h | 6h |
| 33 | 1.2.1.1.2.8 | Guardar | 2h | 2015-04-06 16:30 A | 2015-04-07 09:30 A | 32 | 100% | Gabriel | 2h | 2h |
| 34 | 1.2.1.1.2.9 | Pruebas unitarias | 2h | 2015-04-07 09:30 A | 2015-04-07 11:30 A | 33 | 100% | Gabriel | 2h | 2h |
| 35 | 1.2.1.1.3 | **Paso3 (Seleccionador Fotos)** | 2d | 2015-04-07 11:30 A | 2015-04-09 14:30 A | 25 | 100% |  | 18h | 18h |
| 36 | 1.2.1.1.3.1 | Mostrar fotos | 3h | 2015-04-07 11:30 A | 2015-04-07 15:30 A |  | 100% | Gabriel | 3h | 3h |
| 37 | 1.2.1.1.3.2 | Seleccionar foto | 3h | 2015-04-07 15:30 A | 2015-04-08 09:30 A | 36 | 100% | Gabriel | 3h | 3h |
| 38 | 1.2.1.1.3.3 | Cambiar foto | 3h | 2015-04-08 09:30 A | 2015-04-08 13:30 A | 37 | 100% | Gabriel | 3h | 3h |
| 39 | 1.2.1.1.3.4 | Eliminar foto | 3h | 2015-04-08 13:30 A | 2015-04-08 16:30 A | 38 | 100% | Gabriel | 3h | 3h |
| 40 | 1.2.1.1.3.5 | Guardar fotos | 3h | 2015-04-08 16:30 A | 2015-04-09 10:30 A | 39 | 100% | Gabriel | 3h | 3h |
| 41 | 1.2.1.1.3.6 | Pruebas unitarias | 3h | 2015-04-09 10:30 A | 2015-04-09 14:30 A | 40 | 100% | Gabriel | 3h | 3h |
| 42 | 1.2.1.1.4 | **Paso 4 (Resumen)** | 1.22d | 2015-04-09 14:30 A | 2015-04-13 08:30 A | 35 | 100% |  | 11h | 11h |
| 43 | 1.2.1.1.4.1 | Datos basicos | 2h | 2015-04-09 14:30 A | 2015-04-09 16:30 A |  | 100% | Gabriel | 2h | 2h |
| 44 | 1.2.1.1.4.2 | Imagenes | 2h | 2015-04-09 16:30 A | 2015-04-10 09:30 A | 43 | 100% | Gabriel | 2h | 2h |
| 45 | 1.2.1.1.4.3 | Aceptar terminos y condiciones | 1h | 2015-04-10 09:30 A | 2015-04-10 10:30 A | 44 | 100% | Gabriel | 1h | 1h |
| 46 | 1.2.1.1.4.4 | Volver | 2h | 2015-04-10 10:30 A | 2015-04-10 13:30 A | 45 | 100% | Gabriel | 2h | 2h |
| 47 | 1.2.1.1.4.5 | Publicar | 2h | 2015-04-10 13:30 A | 2015-04-10 15:30 A | 46 | 100% | Gabriel | 2h | 2h |
| 48 | 1.2.1.1.4.6 | Pruebas unitarias | 2h | 2015-04-10 15:30 A | 2015-04-13 08:30 A | 47 | 100% | Gabriel | 2h | 2h |
| 49 | 1.2.1.1.5 | Ajustar Diseño | 6h | 2015-04-13 08:30 A | 2015-04-13 15:30 A | 42 | 100% | Gabriel | 6h | 6h |
| 50 | 1.2.1.2 | Seleccionar tipo de producto | 2h | 2015-04-13 15:30 A | 2015-04-14 08:30 A | 13 | 100% | Gabriel | 2h | 2h |

| ID | WBS | Task | Duration | Start | Finish | Predecessors | Complete | Remaining | Total slack | Free slack | Resources | Work | Actual work |
| --- | --- | --- | --- | --- | --- | --- | --- | --- | --- | --- | --- | --- | --- |
| 51 | 1.2.1.3 | **Publicacion Producto Servicio** | 5d | 2015-04-14 08:30 A | 2015-04-21 14:30 | 50 | 89% | 0.53d | 0d |  |  | 45h | 40.2h |
| 52 | 1.2.1.3.1 | **Paso1 (Seleccionar Categoria)** | 1.44d | 2015-04-14 08:30 A | 2015-04-15 14:30 A |  | 100% |  |  |  |  | 13h | 13h |
| 53 | 1.2.1.3.1.1 | Ajustes de BD | 3h | 2015-04-14 08:30 A | 2015-04-14 11:30 A |  | 100% |  |  |  | Gabriel | 3h | 3h |
| 54 | 1.2.1.3.1.2 | Menú Superior Tipo Producto | 1h | 2015-04-14 11:30 A | 2015-04-14 13:30 A | 53 | 100% |  |  |  | Gabriel | 1h | 1h |
| 55 | 1.2.1.3.1.3 | Paso actual en el proceso | 1h | 2015-04-14 13:30 A | 2015-04-14 14:30 A | 54 | 100% |  |  |  | Gabriel | 1h | 1h |
| 56 | 1.2.1.3.1.4 | **Seleccion de Categorias** | 0.67d | 2015-04-14 14:30 A | 2015-04-15 11:30 A | 55 | 100% |  |  |  |  | 6h | 6h |
| 57 | 1.2.1.3.1.4.1 | Acceso a Datos | 1h | 2015-04-14 14:30 A | 2015-04-14 15:30 A |  | 100% |  |  |  | Gabriel | 1h | 1h |
| 58 | 1.2.1.3.1.4.2 | Filtro por seleccion | 2h | 2015-04-14 15:30 A | 2015-04-15 08:30 A | 57 | 100% |  |  |  | Gabriel | 2h | 2h |
| 59 | 1.2.1.3.1.4.3 | Filtro por texto | 1h | 2015-04-15 08:30 A | 2015-04-15 09:30 A | 58 | 100% |  |  |  | Gabriel | 1h | 1h |
| 60 | 1.2.1.3.1.4.4 | Ultimo seleccionado | 1h | 2015-04-15 09:30 A | 2015-04-15 10:30 A | 59 | 100% |  |  |  | Gabriel | 1h | 1h |
| 61 | 1.2.1.3.1.4.5 | Guardar | 1h | 2015-04-15 10:30 A | 2015-04-15 11:30 A | 60 | 100% |  |  |  | Gabriel | 1h | 1h |
| 62 | 1.2.1.3.1.5 | Pruebas Unitarias | 2h | 2015-04-15 11:30 A | 2015-04-15 14:30 A | 56 | 100% |  |  |  | Gabriel | 2h | 2h |
| 63 | 1.2.1.3.2 | **Paso2 (Detalle Producto)** | 2.56d | 2015-04-15 14:30 A | 2015-04-20 13:30 | 52 | 79% | 0.53d | 0d |  |  | 23h | 18.2h |
| 64 | 1.2.1.3.2.1 | Acceso a datos | 4h | 2015-04-15 14:30 A | 2015-04-16 09:30 A |  | 100% |  |  |  | Gabriel | 4h | 4h |
| 65 | 1.2.1.3.2.2 | Datos básicos producto | 2h | 2015-04-16 09:30 A | 2015-04-16 11:30 A | 64 | 100% |  |  |  | Gabriel | 2h | 2h |
| 66 | 1.2.1.3.2.3 | Seleccionar tipo de moto | 3h | 2015-04-16 11:30 A | 2015-04-16 15:30 A | 65 | 100% |  |  |  | Gabriel | 3h | 3h |
| 67 | 1.2.1.3.2.4 | Datos de domicilio | 4h | 2015-04-16 15:30 A | 2015-04-17 10:30 | 66 | 50% | 2h | -39.01d | 0d | Gabriel | 4h | 2h |
| 68 | 1.2.1.3.2.5 | Insumos | 4h | 2015-04-17 10:30 A | 2015-04-17 15:30 | 67 | 30% | 2.8h | -39.45d | 0d | Gabriel | 4h | 1.2h |
| 69 | 1.2.1.3.2.6 | Editor HTML | 2h | 2015-04-17 15:30 A | 2015-04-20 08:30 A | 68 | 100% |  |  |  | Gabriel | 2h | 2h |
| 70 | 1.2.1.3.2.7 | Guardar | 1h | 2015-04-20 08:30 A | 2015-04-20 09:30 A | 69 | 100% |  |  |  | Gabriel | 1h | 1h |
| 71 | 1.2.1.3.2.8 | Pruebas unitarias | 3h | 2015-04-20 09:30 A | 2015-04-20 13:30 A | 70 | 100% |  |  |  | Gabriel | 3h | 3h |
| 72 | 1.2.1.3.3 | **Paso 3 (Resumen)** | 1d | 2015-04-20 13:30 A | 2015-04-21 14:30 A | 63 | 100% |  |  |  |  | 9h | 9h |
| 73 | 1.2.1.3.3.1 | Datos basicos | 2h | 2015-04-20 13:30 A | 2015-04-20 15:30 A |  | 100% |  |  |  | Gabriel | 2h | 2h |
| 74 | 1.2.1.3.3.2 | Imagenes | 2h | 2015-04-20 15:30 A | 2015-04-21 08:30 A | 73 | 100% |  |  |  | Gabriel | 2h | 2h |
| 75 | 1.2.1.3.3.3 | Aceptar terminos y condiciones | 1h | 2015-04-21 08:30 A | 2015-04-21 09:30 A | 74 | 100% |  |  |  | Gabriel | 1h | 1h |
| 76 | 1.2.1.3.3.4 | Volver | 1h | 2015-04-21 09:30 A | 2015-04-21 10:30 A | 75 | 100% |  |  |  | Gabriel | 1h | 1h |
| 77 | 1.2.1.3.3.5 | Publicar | 1h | 2015-04-21 10:30 A | 2015-04-21 11:30 A | 76 | 100% |  |  |  | Gabriel | 1h | 1h |
| 78 | 1.2.1.3.3.6 | Pruebas unitarias | 2h | 2015-04-21 11:30 A | 2015-04-21 14:30 A | 77 | 100% |  |  |  | Gabriel | 2h | 2h |

| ID | WBS | Task | Duration | Start | Finish | Predecessors | Complete | Resources | Work | Actual work |
| --- | --- | --- | --- | --- | --- | --- | --- | --- | --- | --- |
| 79 | 1.2.1.4 | **Publicación Moto** | 6.22d | 2015-04-21 14:30 A | 2015-04-30 14:30 A | 51 | 100% |  | 56h | 56h |
| 80 | 1.2.1.4.1 | **Paso1 (Seleccionar Categoria)** | 2.22d | 2015-04-21 14:30 A | 2015-04-24 09:30 A |  | 100% |  | 20h | 20h |
| 81 | 1.2.1.4.1.1 | Ajustes de BD | 4h | 2015-04-21 14:30 A | 2015-04-22 09:30 A |  | 100% | Gabriel | 4h | 4h |
| 82 | 1.2.1.4.1.2 | Menú Superior Tipo Producto | 1h | 2015-04-22 09:30 A | 2015-04-22 10:30 A | 81 | 100% | Gabriel | 1h | 1h |
| 83 | 1.2.1.4.1.3 | Paso actual en el proceso | 1h | 2015-04-22 10:30 A | 2015-04-22 11:30 A | 82 | 100% | Gabriel | 1h | 1h |
| 84 | 1.2.1.4.1.4 | **Seleccion de Categorias** | 1.22d | 2015-04-22 11:30 A | 2015-04-23 15:30 A | 83 | 100% |  | 11h | 11h |
| 85 | 1.2.1.4.1.4.1 | Acceso a Datos | 4h | 2015-04-22 11:30 A | 2015-04-22 16:30 A |  | 100% | Gabriel | 4h | 4h |
| 86 | 1.2.1.4.1.4.2 | Filtro por seleccion | 2h | 2015-04-22 16:30 A | 2015-04-23 09:30 A | 85 | 100% | Gabriel | 2h | 2h |
| 87 | 1.2.1.4.1.4.3 | Filtro por texto | 2h | 2015-04-23 09:30 A | 2015-04-23 11:30 A | 86 | 100% | Gabriel | 2h | 2h |
| 88 | 1.2.1.4.1.4.4 | Ultimo seleccionado | 1h | 2015-04-23 11:30 A | 2015-04-23 13:30 A | 87 | 100% | Gabriel | 1h | 1h |
| 89 | 1.2.1.4.1.4.5 | Guardar | 2h | 2015-04-23 13:30 A | 2015-04-23 15:30 A | 88 | 100% | Gabriel | 2h | 2h |
| 90 | 1.2.1.4.1.5 | Pruebas Unitarias | 3h | 2015-04-23 15:30 A | 2015-04-24 09:30 A | 84 | 100% | Gabriel | 3h | 3h |
| 91 | 1.2.1.4.2 | **Paso2 (Detalle Producto)** | 1.56d | 2015-04-24 09:30 A | 2015-04-27 16:30 A | 80 | 100% |  | 14h | 14h |
| 92 | 1.2.1.4.2.1 | Acceso a datos | 4h | 2015-04-24 09:30 A | 2015-04-24 14:30 A |  | 100% | Gabriel | 4h | 4h |
| 93 | 1.2.1.4.2.2 | Datos básicos producto | 1h | 2015-04-24 14:30 A | 2015-04-24 15:30 A | 92 | 100% | Gabriel | 1h | 1h |
| 94 | 1.2.1.4.2.3 | Seleccionar tipo de moto | 5h | 2015-04-24 15:30 A | 2015-04-27 11:30 A | 93 | 100% | Gabriel | 5h | 5h |
| 95 | 1.2.1.4.2.4 | Guardar | 2h | 2015-04-27 11:30 A | 2015-04-27 14:30 A | 94 | 100% | Gabriel | 2h | 2h |
| 96 | 1.2.1.4.2.5 | Pruebas unitarias | 2h | 2015-04-27 14:30 A | 2015-04-27 16:30 A | 95 | 100% | Gabriel | 2h | 2h |
| 97 | 1.2.1.4.3 | **Paso3 (Seleccionador Fotos)** | 0.89d | 2015-04-27 16:30 A | 2015-04-28 16:30 A | 91 | 100% |  | 8h | 8h |
| 98 | 1.2.1.4.3.1 | Mostrar fotos | 2h | 2015-04-27 16:30 A | 2015-04-28 09:30 A |  | 100% | Gabriel | 2h | 2h |
| 99 | 1.2.1.4.3.2 | Seleccionar foto | 1h | 2015-04-28 09:30 A | 2015-04-28 10:30 A | 98 | 100% | Gabriel | 1h | 1h |
| 100 | 1.2.1.4.3.3 | Cambiar foto | 1h | 2015-04-28 10:30 A | 2015-04-28 11:30 A | 99 | 100% | Gabriel | 1h | 1h |
| 101 | 1.2.1.4.3.4 | Eliminar foto | 1h | 2015-04-28 11:30 A | 2015-04-28 13:30 A | 100 | 100% | Gabriel | 1h | 1h |
| 102 | 1.2.1.4.3.5 | Guardar fotos | 1h | 2015-04-28 13:30 A | 2015-04-28 14:30 A | 101 | 100% | Gabriel | 1h | 1h |
| 103 | 1.2.1.4.3.6 | Pruebas unitarias | 2h | 2015-04-28 14:30 A | 2015-04-28 16:30 A | 102 | 100% | Gabriel | 2h | 2h |

| ID | WBS | Task | Duration | Start | Finish | Predecessors | Complete | Remaining | Total slack | Free slack | Resources | Work | Actual work |
| --- | --- | --- | --- | --- | --- | --- | --- | --- | --- | --- | --- | --- | --- |
| 104 | 1.2.1.4.4 | **Paso 4 (Resumen)** | 0.89d | 2015-04-28 16:30 A | 2015-04-29 16:30 A | 97 | 100% |  |  |  |  | 8h | 8h |
| 105 | 1.2.1.4.4.1 | Datos basicos | 2h | 2015-04-28 16:30 A | 2015-04-29 09:30 A |  | 100% |  |  |  | Gabriel | 2h | 2h |
| 106 | 1.2.1.4.4.2 | Imagenes | 1h | 2015-04-29 09:30 A | 2015-04-29 10:30 A | 105 | 100% |  |  |  | Gabriel | 1h | 1h |
| 107 | 1.2.1.4.4.3 | Aceptar terminos y condiciones | 1h | 2015-04-29 10:30 A | 2015-04-29 11:30 A | 106 | 100% |  |  |  | Gabriel | 1h | 1h |
| 108 | 1.2.1.4.4.4 | Volver | 1h | 2015-04-29 11:30 A | 2015-04-29 13:30 A | 107 | 100% |  |  |  | Gabriel | 1h | 1h |
| 109 | 1.2.1.4.4.5 | Publicar | 1h | 2015-04-29 13:30 A | 2015-04-29 14:30 A | 108 | 100% |  |  |  | Gabriel | 1h | 1h |
| 110 | 1.2.1.4.4.6 | Pruebas unitarias | 2h | 2015-04-29 14:30 A | 2015-04-29 16:30 A | 109 | 100% |  |  |  | Gabriel | 2h | 2h |
| 111 | 1.2.1.4.5 | Ajustar Diseño | 6h | 2015-04-29 16:30 A | 2015-04-30 14:30 A | 104 | 100% |  |  |  | Gabriel | 6h | 6h |
| 112 | 1.2.1.5 | **Detalle Tienda** | 3.44d | 2015-04-30 14:30 A | 2015-05-06 13:30 | 79 | 94% | 0.22d | 0d |  |  | 31h | 29h |
| 113 | 1.2.1.5.1 | Fondo de tienda | 2h | 2015-04-30 14:30 A | 2015-04-30 16:30 A |  | 100% |  |  |  | Gabriel | 2h | 2h |
| 114 | 1.2.1.5.2 | Imagenes adicionales | 5h | 2015-04-30 16:30 A | 2015-05-01 13:30 A | 113 | 100% |  |  |  | Gabriel | 5h | 5h |
| 115 | 1.2.1.5.3 | Informacion básica | 2h | 2015-05-01 13:30 A | 2015-05-01 15:30 A | 114 | 100% |  |  |  | Gabriel | 2h | 2h |
| 116 | 1.2.1.5.4 | Enviar mensaje privado | 1h | 2015-05-01 15:30 | 2015-05-01 16:30 | 115 |  |  | -74.45d | 0d | Gabriel | 1h |  |
| 117 | 1.2.1.5.5 | Contar experiencia | 1h | 2015-05-01 16:30 | 2015-05-04 08:30 | 116 |  |  | -74.45d | 0d | Gabriel | 1h |  |
| 118 | 1.2.1.5.6 | **Listado de productos** | 0.89d | 2015-05-04 08:30 A | 2015-05-05 08:30 A | 117 | 100% |  |  |  |  | 8h | 8h |
| 119 | 1.2.1.5.6.1 | Listar productos | 4h | 2015-05-04 08:30 A | 2015-05-04 13:30 A |  | 100% |  |  |  | Gabriel | 4h | 4h |
| 120 | 1.2.1.5.6.2 | Filtrar Productos | 3h | 2015-05-04 13:30 A | 2015-05-04 16:30 A | 119 | 100% |  |  |  | Gabriel | 3h | 3h |
| 121 | 1.2.1.5.6.3 | Paginar productos | 1h | 2015-05-04 16:30 A | 2015-05-05 08:30 A | 120 | 100% |  |  |  | Gabriel | 1h | 1h |
| 122 | 1.2.1.5.7 | Listar comentarios | 3h | 2015-05-05 08:30 A | 2015-05-05 11:30 A | 118 | 100% |  |  |  | Gabriel | 3h | 3h |
| 123 | 1.2.1.5.8 | **Mapas** | 1d | 2015-05-05 11:30 A | 2015-05-06 13:30 A | 122 | 100% |  |  |  |  | 9h | 9h |
| 124 | 1.2.1.5.8.1 | Mostrar sedes | 4h | 2015-05-05 11:30 A | 2015-05-05 16:30 A |  | 100% |  |  |  | Gabriel | 4h | 4h |
| 125 | 1.2.1.5.8.2 | Informacion básica | 1h | 2015-05-05 16:30 A | 2015-05-06 08:30 A | 124 | 100% |  |  |  | Gabriel | 1h | 1h |
| 126 | 1.2.1.5.8.3 | Ubicar punto | 4h | 2015-05-06 08:30 A | 2015-05-06 13:30 A | 125 | 100% |  |  |  | Gabriel | 4h | 4h |
| 127 | 1.2.1.6 | **Panel de Control** | 15.44d | 2015-05-06 13:30 A | 2015-05-29 16:30 | 112 | 28% | 11.11d | -8d | 0d |  | 139h | 39h |
| 128 | 1.2.1.6.1 | Home Panel De Control | 6h | 2015-05-06 13:30 | 2015-05-07 10:30 |  |  |  | -76.68d | 0d | Gabriel | 6h |  |

| ID | WBS | Task | Duration | Start | Finish | Predecessors | Complete | Remaining | Total slack | Free slack | Resources | Work | Actual work |
| --- | --- | --- | --- | --- | --- | --- | --- | --- | --- | --- | --- | --- | --- |
| 129 | 1.2.1.6.2 | **Mis datos** | 1.89d | 2015-05-07 10:30 A | 2015-05-11 11:30 | 128 | 88% | 0.22d | 0d |  |  | 17h | 15h |
| 130 | 1.2.1.6.2.1 | BD | 2h | 2015-05-07 10:30 A | 2015-05-07 13:30 A |  | 100% |  |  |  | Gabriel | 2h | 2h |
| 131 | 1.2.1.6.2.2 | Datos basicos | 3h | 2015-05-07 13:30 A | 2015-05-07 16:30 A | 130 | 100% |  |  |  | Gabriel | 3h | 3h |
| 132 | 1.2.1.6.2.3 | **Mi moto** | 0.56d | 2015-05-07 16:30 A | 2015-05-08 13:30 | 131 | 80% | 0.11d | -0.11d | 0d |  | 5h | 4h |
| 133 | 1.2.1.6.2.3.1 | Seleccion de marca | 3h | 2015-05-07 16:30 A | 2015-05-08 10:30 A |  | 100% |  |  |  | Gabriel | 3h | 3h |
| 134 | 1.2.1.6.2.3.2 | Datos adicionales | 1h | 2015-05-08 10:30 A | 2015-05-08 11:30 A | 133 | 100% |  |  |  | Gabriel | 1h | 1h |
| 135 | 1.2.1.6.2.3.3 | Carga de logo | 1h | 2015-05-08 11:30 | 2015-05-08 13:30 | 134 |  |  | -77.68d | 0d | Gabriel | 1h |  |
| 136 | 1.2.1.6.2.4 | **Cambiar Clave** | 0.22d | 2015-05-08 13:30 A | 2015-05-08 15:30 | 132 | 50% | 0.11d | 0d |  |  | 2h | 1h |
| 137 | 1.2.1.6.2.4.1 | Ajustar diseño | 1h | 2015-05-08 13:30 | 2015-05-08 14:30 |  |  |  | -77.68d | 0d | Gabriel | 1h |  |
| 138 | 1.2.1.6.2.4.2 | Retornar a edicion de datos | 1h | 2015-05-08 14:30 A | 2015-05-08 15:30 A | 137 | 100% |  |  |  | Gabriel | 1h | 1h |
| 139 | 1.2.1.6.2.5 | Guardar | 2h | 2015-05-08 15:30 A | 2015-05-11 08:30 A | 136 | 100% |  |  |  | Gabriel | 2h | 2h |
| 140 | 1.2.1.6.2.6 | Pruebas unitarias | 3h | 2015-05-11 08:30 A | 2015-05-11 11:30 A | 139 | 100% |  |  |  | Gabriel | 3h | 3h |
| 141 | 1.2.1.6.3 | **Actualizacion de Tienda** | 4.89d | 2015-05-11 11:30 A | 2015-05-18 16:30 | 129 | 55% | 2.22d | 0d |  |  | 44h | 24h |
| 142 | 1.2.1.6.3.1 | BD | 2h | 2015-05-11 11:30 A | 2015-05-11 14:30 |  | 50% | 1h | -77.01d | 0d | Gabriel | 2h | 1h |
| 143 | 1.2.1.6.3.2 | Datos basicos | 2h | 2015-05-11 14:30 A | 2015-05-11 16:30 A | 142 | 100% |  |  |  | Gabriel | 2h | 2h |
| 144 | 1.2.1.6.3.3 | Cargar logo | 3h | 2015-05-11 16:30 A | 2015-05-12 10:30 A | 143 | 100% |  |  |  | Gabriel | 3h | 3h |
| 145 | 1.2.1.6.3.4 | Cargar fondo | 2h | 2015-05-12 10:30 A | 2015-05-12 13:30 A | 144 | 100% |  |  |  | Gabriel | 2h | 2h |
| 146 | 1.2.1.6.3.5 | Servicios especializados | 6h | 2015-05-12 13:30 | 2015-05-13 10:30 | 145 |  |  | -79.9d | 0d | Gabriel | 6h |  |
| 147 | 1.2.1.6.3.6 | Recibir cotizaciones de | 2h | 2015-05-13 10:30 | 2015-05-13 13:30 | 146 |  |  | -79.9d | 0d | Gabriel | 2h |  |
| 148 | 1.2.1.6.3.7 | Referencias especializadas | 4h | 2015-05-13 13:30 | 2015-05-14 08:30 | 147 |  |  | -79.9d | 0d | Gabriel | 4h |  |
| 149 | 1.2.1.6.3.8 | **Imagenes Adicionales** | 0.78d | 2015-05-14 08:30 | 2015-05-14 16:30 | 148 |  |  | -79.34d | 0d |  | 7h |  |
| 150 | 1.2.1.6.3.8.1 | Agregar | 4h | 2015-05-14 08:30 | 2015-05-14 13:30 |  |  |  | -82.12d | 0d | Gabriel | 4h |  |
| 151 | 1.2.1.6.3.8.2 | Eliminar | 1h | 2015-05-14 13:30 | 2015-05-14 14:30 | 150 |  |  | -82.12d | 0d | Gabriel | 1h |  |
| 152 | 1.2.1.6.3.8.3 | Cambiar | 2h | 2015-05-14 14:30 | 2015-05-14 16:30 | 151 |  |  | -82.12d | 0d | Gabriel | 2h |  |

| ID | WBS | Task | Duration | Start | Finish | Predecessors | Complete | Total slack | Free slack | Resources | Work | Actual work |
| --- | --- | --- | --- | --- | --- | --- | --- | --- | --- | --- | --- | --- |
| 153 | 1.2.1.6.3.9 | **Sedes** | 1.78d | 2015-05-14 16:30 A | 2015-05-18 16:30 A | 149 | 100% |  |  |  | 16h | 16h |
| 154 | 1.2.1.6.3.9.1 | BD | 3h | 2015-05-14 16:30 A | 2015-05-15 10:30 A |  | 100% |  |  | Gabriel | 3h | 3h |
| 155 | 1.2.1.6.3.9.2 | Listar | 2h | 2015-05-15 10:30 A | 2015-05-15 13:30 A | 154 | 100% |  |  | Gabriel | 2h | 2h |
| 156 | 1.2.1.6.3.9.3 | Crear | 4h | 2015-05-15 13:30 A | 2015-05-18 08:30 A | 155 | 100% |  |  | Gabriel | 4h | 4h |
| 157 | 1.2.1.6.3.9.4 | Editar | 2h | 2015-05-18 08:30 A | 2015-05-18 10:30 A | 156 | 100% |  |  | Gabriel | 2h | 2h |
| 158 | 1.2.1.6.3.9.5 | Eliminar | 1h | 2015-05-18 10:30 A | 2015-05-18 11:30 A | 157 | 100% |  |  | Gabriel | 1h | 1h |
| 159 | 1.2.1.6.3.9.6 | Ubicar en mapa | 4h | 2015-05-18 11:30 A | 2015-05-18 16:30 A | 158 | 100% |  |  | Gabriel | 4h | 4h |
| 160 | 1.2.1.6.4 | **Mis productos** | 2d | 2015-05-18 16:30 | 2015-05-21 09:30 | 141 |  | -81.12d | 0d |  | 18h |  |
| 161 | 1.2.1.6.4.1 | Filtro de tipo de producto | 2h | 2015-05-18 16:30 | 2015-05-19 09:30 |  |  | -81.68d | 0d | Gabriel | 2h |  |
| 162 | 1.2.1.6.4.2 | Filtro estado | 2h | 2015-05-19 09:30 | 2015-05-19 11:30 | 161 |  | -81.68d | 0d | Gabriel | 2h |  |
| 163 | 1.2.1.6.4.3 | Listado de productos | 3h | 2015-05-19 11:30 | 2015-05-19 15:30 | 162 |  | -81.68d | 0d | Gabriel | 3h |  |
| 164 | 1.2.1.6.4.4 | Acceso a datos | 2h | 2015-05-19 15:30 | 2015-05-20 08:30 | 163 |  | -81.68d | 0d | Gabriel | 2h |  |
| 165 | 1.2.1.6.4.5 | **Responder preguntas** | 0.67d | 2015-05-20 08:30 | 2015-05-20 15:30 | 164 |  | -81.12d | 0d |  | 6h |  |
| 166 | 1.2.1.6.4.5.1 | Listado de preguntas | 3h | 2015-05-20 08:30 | 2015-05-20 11:30 |  |  | -81.68d | 0d | Gabriel | 3h |  |
| 167 | 1.2.1.6.4.5.2 | Guardado de datos | 2h | 2015-05-20 11:30 | 2015-05-20 14:30 | 166 |  | -81.68d | 0d | Gabriel | 2h |  |
| 168 | 1.2.1.6.4.5.3 | Enviar notificacion | 1h | 2015-05-20 14:30 | 2015-05-20 15:30 | 167 |  | -81.68d | 0d | Gabriel | 1h |  |
| 169 | 1.2.1.6.4.6 | Pruebas unitarias | 3h | 2015-05-20 15:30 | 2015-05-21 09:30 | 165 |  | -81.68d | 0d | Gabriel | 3h |  |
| 170 | 1.2.1.6.5 | **Mis ventas** | 1d | 2015-05-21 09:30 | 2015-05-22 10:30 | 160 |  | -81.12d | 0d |  | 9h |  |
| 171 | 1.2.1.6.5.1 | Listado de productos | 3h | 2015-05-21 09:30 | 2015-05-21 13:30 |  |  | -81.68d | 0d | Gabriel | 3h |  |
| 172 | 1.2.1.6.5.2 | Filtro | 2h | 2015-05-21 13:30 | 2015-05-21 15:30 | 171 |  | -81.68d | 0d | Gabriel | 2h |  |
| 173 | 1.2.1.6.5.3 | Acceso a datos | 2h | 2015-05-21 15:30 | 2015-05-22 08:30 | 172 |  | -81.68d | 0d | Gabriel | 2h |  |
| 174 | 1.2.1.6.5.4 | Pruebas unitarias | 2h | 2015-05-22 08:30 | 2015-05-22 10:30 | 173 |  | -81.68d | 0d | Gabriel | 2h |  |
| 175 | 1.2.1.6.6 | **Mis Compras** | 2.33d | 2015-05-22 10:30 | 2015-05-26 16:30 | 170 |  | -81.12d | 0d |  | 21h |  |
| 176 | 1.2.1.6.6.1 | Listado de productos | 4h | 2015-05-22 10:30 | 2015-05-22 15:30 |  |  | -81.68d | 0d | Gabriel | 4h |  |
| 177 | 1.2.1.6.6.2 | Filtros | 3h | 2015-05-22 15:30 | 2015-05-25 09:30 | 176 |  | -81.68d | 0d | Gabriel | 3h |  |
| 178 | 1.2.1.6.6.3 | Paginacion | 2h | 2015-05-25 09:30 | 2015-05-25 11:30 | 177 |  | -81.68d | 0d | Gabriel | 2h |  |
| 179 | 1.2.1.6.6.4 | BD | 2h | 2015-05-25 11:30 | 2015-05-25 14:30 | 178 |  | -81.68d | 0d | Gabriel | 2h |  |

| ID | WBS | Task | Duration | Start | Finish | Predecessors | Complete | Remaining | Total slack | Free slack | Resources | Work | Actual work |
| --- | --- | --- | --- | --- | --- | --- | --- | --- | --- | --- | --- | --- | --- |
| 180 | 1.2.1.6.6.5 | **Calificar** | 0.78d | 2015-05-25 14:30 | 2015-05-26 13:30 | 179 |  |  | -81.12d | 0d |  | 7h |  |
| 181 | 1.2.1.6.6.5.1 | Datos basicos | 2h | 2015-05-25 14:30 | 2015-05-25 16:30 |  |  |  | -81.68d | 0d | Gabriel | 2h |  |
| 182 | 1.2.1.6.6.5.2 | BD | 2h | 2015-05-25 16:30 | 2015-05-26 09:30 | 181 |  |  | -81.68d | 0d | Gabriel | 2h |  |
| 183 | 1.2.1.6.6.5.3 | Guardar | 2h | 2015-05-26 09:30 | 2015-05-26 11:30 | 182 |  |  | -81.68d | 0d | Gabriel | 2h |  |
| 184 | 1.2.1.6.6.5.4 | Volver a listado | 1h | 2015-05-26 11:30 | 2015-05-26 13:30 | 183 |  |  | -81.68d | 0d | Gabriel | 1h |  |
| 185 | 1.2.1.6.6.6 | Pruebas unitarias | 3h | 2015-05-26 13:30 | 2015-05-26 16:30 | 180 |  |  | -81.68d | 0d | Gabriel | 3h |  |
| 186 | 1.2.1.6.7 | **Mensajes Recibidos** | 1.67d | 2015-05-26 16:30 | 2015-05-28 15:30 | 175 |  |  | -81.12d | 0d |  | 15h |  |
| 187 | 1.2.1.6.7.1 | Listado de mensajes | 4h | 2015-05-26 16:30 | 2015-05-27 11:30 |  |  |  | -81.68d | 0d | Gabriel | 4h |  |
| 188 | 1.2.1.6.7.2 | Filtro | 2h | 2015-05-27 11:30 | 2015-05-27 14:30 | 187 |  |  | -81.68d | 0d | Gabriel | 2h |  |
| 189 | 1.2.1.6.7.3 | Cargar hilo de mensajes | 4h | 2015-05-27 14:30 | 2015-05-28 09:30 | 188 |  |  | -81.68d | 0d | Gabriel | 4h |  |
| 190 | 1.2.1.6.7.4 | Responder mensaje | 2h | 2015-05-28 09:30 | 2015-05-28 11:30 | 189 |  |  | -81.68d | 0d | Gabriel | 2h |  |
| 191 | 1.2.1.6.7.5 | Pruebas unitarias | 3h | 2015-05-28 11:30 | 2015-05-28 15:30 | 190 |  |  | -81.68d | 0d | Gabriel | 3h |  |
| 192 | 1.2.1.6.8 | Panel de notificaciones | 9h | 2015-05-28 15:30 | 2015-05-29 16:30 | 186 |  |  | -81.12d | 0d | Gabriel | 9h |  |
| 193 | 1.2.1.7 | **Registro** | 2.33d | 2015-05-29 16:30 A | 2015-06-03 13:30 | 127 | 65% | 0.82d | 0d |  |  | 21h | 13.6h |
| 194 | 1.2.1.7.1 | Tipo persona | 3h | 2015-05-29 16:30 A | 2015-06-01 10:30 |  | 20% | 2.4h | -81.34d | 0d | Gabriel | 3h | 0.6h |
| 195 | 1.2.1.7.2 | Datos basicos | 3h | 2015-06-01 10:30 A | 2015-06-01 14:30 A | 194 | 100% |  |  |  | Gabriel | 3h | 3h |
| 196 | 1.2.1.7.3 | Guardar datos | 3h | 2015-06-01 14:30 A | 2015-06-02 08:30 A | 195 | 100% |  |  |  | Gabriel | 3h | 3h |
| 197 | 1.2.1.7.4 | Enviar correo de confirmacion | 1h | 2015-06-02 08:30 | 2015-06-02 09:30 | 196 |  |  | -82.12d | 0d | Gabriel | 1h |  |
| 198 | 1.2.1.7.5 | Pruebas unitarias | 3h | 2015-06-02 09:30 A | 2015-06-02 13:30 A | 197 | 100% |  |  |  | Gabriel | 3h | 3h |
| 199 | 1.2.1.7.6 | **Registro rapido** | 0.89d | 2015-06-02 13:30 A | 2015-06-03 13:30 | 198 | 50% | 0.44d | 0d |  |  | 8h | 4h |
| 200 | 1.2.1.7.6.1 | Creacion funcionalidad | 6h | 2015-06-02 13:30 A | 2015-06-03 10:30 |  | 50% | 3h | -83.12d | 0d | Gabriel | 6h | 3h |
| 201 | 1.2.1.7.6.2 | Llamado en los sitios pendientes | 2h | 2015-06-03 10:30 A | 2015-06-03 13:30 | 200 | 50% | 1h | -83.34d | 0d | Gabriel | 2h | 1h |
| 202 | 1.2.1.8 | **Autenticacion** | 1.33d | 2015-06-03 13:30 A | 2015-06-05 08:30 | 193 | 21% | 1.06d | 0d |  |  | 12h | 2.5h |
| 203 | 1.2.1.8.1 | Datos basicos | 3h | 2015-06-03 13:30 | 2015-06-03 16:30 |  |  |  | -83.34d | 0d | Gabriel | 3h |  |
| 204 | 1.2.1.8.2 | Autenticacion | 2h | 2015-06-03 16:30 | 2015-06-04 09:30 | 203 |  |  | -83.34d | 0d | Gabriel | 2h |  |
| 205 | 1.2.1.8.3 | Pruebas unitarias | 2h | 2015-06-04 09:30 | 2015-06-04 11:30 | 204 |  |  | -83.34d | 0d | Gabriel | 2h |  |

| ID | WBS | Task | Duration | Start | Finish | Predecessors | Complete | Remaining | Total slack | Free slack | Resources | Work | Actual work |
| --- | --- | --- | --- | --- | --- | --- | --- | --- | --- | --- | --- | --- | --- |
| 206 | 1.2.1.8.4 | **Autenticacion Rapida** | 0.56d | 2015-06-04 11:30 A | 2015-06-05 08:30 | 205 | 50% | 0.28d | 0d |  |  | 5h | 2.5h |
| 207 | 1.2.1.8.4.1 | Crear funcionalidad | 3h | 2015-06-04 11:30 A | 2015-06-04 15:30 |  | 50% | 1.5h | -83.68d | 0d | Gabriel | 3h | 1.5h |
| 208 | 1.2.1.8.4.2 | Llamado en los sitios pendientes | 2h | 2015-06-04 15:30 A | 2015-06-05 08:30 | 207 | 50% | 1h | 0d |  | Gabriel | 2h | 1h |
| 209 | 1.2.1.9 | **Recordar Clave** | 0.33d | 2015-06-05 08:30 | 2015-06-05 11:30 | 202 |  |  | -83.9d | 0d |  | 3h |  |
| 210 | 1.2.1.9.1 | Revisar funcionalidad | 2h | 2015-06-05 08:30 | 2015-06-05 10:30 |  |  |  | -83.9d | 0d | Gabriel | 2h |  |
| 211 | 1.2.1.9.2 | Enviar correo | 1h | 2015-06-05 10:30 | 2015-06-05 11:30 | 210 |  |  | -83.9d | 0d | Gabriel | 1h |  |
| 212 | 1.2.1.10 | **Listado de productos** | 2.22d | 2015-06-05 11:30 | 2015-06-09 16:30 | 209 |  |  | -83.9d | 0d |  | 20h |  |
| 213 | 1.2.1.10.1 | Listado de productos | 4h | 2015-06-05 11:30 | 2015-06-05 16:30 |  |  |  | -83.9d | 0d | Gabriel | 4h |  |
| 214 | 1.2.1.10.2 | Mejorar filtrado | 16h | 2015-06-05 16:30 | 2015-06-09 16:30 | 213 |  |  | -83.9d | 0d | Gabriel | 16h |  |
| 215 | 1.2.1.11 | **Detalle del Producto** | 2.78d | 2015-06-09 16:30 | 2015-06-15 08:30 | 212 |  |  | -83.9d | 0d |  | 25h |  |
| 216 | 1.2.1.11.1 | Revision de links y carga de info | 4h | 2015-06-09 16:30 | 2015-06-10 11:30 |  |  |  | -83.9d | 0d | Gabriel | 4h |  |
| 217 | 1.2.1.11.2 | Comprar y notificar | 3h | 2015-06-10 11:30 | 2015-06-10 15:30 | 216 |  |  | -83.9d | 0d | Gabriel | 3h |  |
| 218 | 1.2.1.11.3 | **Pestaña detalle de producto** | 0.67d | 2015-06-10 15:30 | 2015-06-11 13:30 | 217 |  |  | -83.9d | 0d |  | 6h |  |
| 219 | 1.2.1.11.3.1 | Cargar caracteristcas | 2h | 2015-06-10 15:30 | 2015-06-11 08:30 |  |  |  | -83.9d | 0d | Gabriel | 2h |  |
| 220 | 1.2.1.11.3.2 | Cargar HTML | 4h | 2015-06-11 08:30 | 2015-06-11 13:30 | 219 |  |  | -83.9d | 0d | Gabriel | 4h |  |
| 221 | 1.2.1.11.4 | **Pestaña reviews** | 0.22d | 2015-06-11 13:30 | 2015-06-11 15:30 | 218 |  |  | -83.9d | 0d |  | 2h |  |
| 222 | 1.2.1.11.4.1 | Cargar Reviews | 1h | 2015-06-11 13:30 | 2015-06-11 14:30 |  |  |  | -83.9d | 0d | Gabriel | 1h |  |
| 223 | 1.2.1.11.4.2 | Quitar parcialmente opcion de nuevo review | 1h | 2015-06-11 14:30 | 2015-06-11 15:30 | 222 |  |  | -83.9d | 0d | Gabriel | 1h |  |
| 224 | 1.2.1.11.5 | Quitar pestaña envios | 0.5h | 2015-06-11 15:30 | 2015-06-11 16:00 | 221 |  |  | -83.9d | 0d | Gabriel | 0.5h |  |
| 225 | 1.2.1.11.6 | Quitar pestaña price match | 0.5h | 2015-06-11 16:00 | 2015-06-11 16:30 | 224 |  |  | -83.9d | 0d | Gabriel | 0.5h |  |
| 226 | 1.2.1.11.7 | **Preguntas** | 1d | 2015-06-11 16:30 | 2015-06-15 08:30 | 225 |  |  | -83.9d | 0d |  | 9h |  |
| 227 | 1.2.1.11.7.1 | BD | 2h | 2015-06-11 16:30 | 2015-06-12 09:30 |  |  |  | -83.9d | 0d | Gabriel | 2h |  |
| 228 | 1.2.1.11.7.2 | Listar preguntas | 4h | 2015-06-12 09:30 | 2015-06-12 14:30 | 227 |  |  | -83.9d | 0d | Gabriel | 4h |  |
| 229 | 1.2.1.11.7.3 | Agregar preguntas | 3h | 2015-06-12 14:30 | 2015-06-15 08:30 | 228 |  |  | -83.9d | 0d | Gabriel | 3h |  |

| ID | WBS | Task | Duration | Start | Finish | Predecessors | Total slack | Free slack | Resources | Work |
| --- | --- | --- | --- | --- | --- | --- | --- | --- | --- | --- |
| 230 | 1.2.1.12 | **Home** | 4.67d | 2015-06-15 08:30 | 2015-06-22 10:30 | 215 | -83.9d | 0d |  | 42h |
| 231 | 1.2.1.12.1 | Menu de categorias | 10h | 2015-06-15 08:30 | 2015-06-16 10:30 |  | -83.9d | 0d | Gabriel | 10h |
| 232 | 1.2.1.12.2 | Menu principal | 10h | 2015-06-16 10:30 | 2015-06-17 13:30 | 231 | -83.9d | 0d | Gabriel | 10h |
| 233 | 1.2.1.12.3 | Ajustes generales | 4h | 2015-06-17 13:30 | 2015-06-18 08:30 | 232 | -83.9d | 0d | Gabriel | 4h |
| 234 | 1.2.1.12.4 | Revision de Buscador | 10h | 2015-06-18 08:30 | 2015-06-19 10:30 | 233 | -83.9d | 0d | Gabriel | 10h |
| 235 | 1.2.1.12.5 | Eliminación funcionalidades innecesarias | 4h | 2015-06-19 10:30 | 2015-06-19 15:30 | 234 | -83.9d | 0d | Gabriel | 4h |
| 236 | 1.2.1.12.6 | Pruebas unitarias | 4h | 2015-06-19 15:30 | 2015-06-22 10:30 | 235 | -83.9d | 0d | Gabriel | 4h |
| 237 | 1.2.1.13 | Mapa del sitio | 2h | 2015-06-22 10:30 | 2015-06-22 13:30 | 230 | -83.9d | 0d | Gabriel | 2h |
| 238 | 1.2.1.14 | Condiciones de uso | 1h | 2015-06-22 13:30 | 2015-06-22 14:30 | 237 | -83.9d | 0d | Gabriel | 1h |
| 239 | 1.2.1.15 | Contacto | 4h | 2015-06-22 14:30 | 2015-06-23 09:30 | 238 | -83.9d | 0d | Gabriel | 4h |
| 240 | 1.2.1.16 | Acerca de nosotros | 2h | 2015-06-23 09:30 | 2015-06-23 11:30 | 239 | -83.9d | 0d | Gabriel | 2h |
| 241 | 1.2.1.17 | Ajustes adicionales | 27h | 2015-06-23 11:30 | 2015-06-26 15:30 | 240 | -83.9d | 0d | Gabriel | 27h |
| 242 | 1.2.2 | **Diseño Web** | 28.63d | 2015-03-30 15:30 | 2015-05-14 08:10 | 2 | -47.64d | 0d |  | 257.68h |
| 243 | 1.2.2.1 | Visuales | 9h | 2015-03-30 15:30 | 2015-03-31 16:30 |  | -47.64d | 0d | Julian | 9h |
| 244 | 1.2.2.2 | Home | 9h | 2015-03-31 16:30 | 2015-04-02 08:30 | 243 | -47.64d | 0d | Julian | 9h |
| 245 | 1.2.2.3 | **Panel de Control** | 14.63d | 2015-04-02 08:30 | 2015-04-24 13:10 | 244 | -47.64d | 0d |  | 131.68h |
| 246 | 1.2.2.3.1 | **Publicacion Producto** | 2.76d | 2015-04-02 08:30 | 2015-04-07 09:22 |  | -47.64d | 0d |  | 24.88h |
| 247 | 1.2.2.3.1.1 | Paso1 | 0.39d | 2015-04-02 08:30 | 2015-04-02 13:01 |  | -47.64d | 0d | Julian | 3.52h |
| 248 | 1.2.2.3.1.2 | Paso2 | 0.79d | 2015-04-02 13:01 | 2015-04-03 11:08 | 247 | -47.64d | 0d | Julian | 7.12h |
| 249 | 1.2.2.3.1.3 | Paso3 | 0.79d | 2015-04-03 11:08 | 2015-04-06 10:15 | 248 | -47.64d | 0d | Julian | 7.12h |
| 250 | 1.2.2.3.1.4 | Paso4 | 0.79d | 2015-04-06 10:15 | 2015-04-07 09:22 | 249 | -47.64d | 0d | Julian | 7.12h |
| 251 | 1.2.2.3.2 | Home Panel De Control | 0.79d | 2015-04-07 09:22 | 2015-04-08 08:30 | 246 | -47.64d | 0d | Julian | 7.12h |
| 252 | 1.2.2.3.3 | **Publicacion Moto** | 3.16d | 2015-04-08 08:30 | 2015-04-13 13:58 | 251 | -47.64d | 0d |  | 28.48h |
| 253 | 1.2.2.3.3.1 | Paso1 | 0.79d | 2015-04-08 08:30 | 2015-04-08 16:37 |  | -47.64d | 0d | Julian | 7.12h |
| 254 | 1.2.2.3.3.2 | Paso2 | 0.79d | 2015-04-08 16:37 | 2015-04-09 15:44 | 253 | -47.64d | 0d | Julian | 7.12h |
| 255 | 1.2.2.3.3.3 | Paso3 | 0.79d | 2015-04-09 15:44 | 2015-04-10 14:51 | 254 | -47.64d | 0d | Julian | 7.12h |
| 256 | 1.2.2.3.3.4 | Paso4 | 0.79d | 2015-04-10 14:51 | 2015-04-13 13:58 | 255 | -47.64d | 0d | Julian | 7.12h |
| 257 | 1.2.2.3.4 | Actualizacion de datos | 0.79d | 2015-04-13 13:58 | 2015-04-14 13:06 | 252 | -47.64d | 0d | Julian | 7.12h |
| 258 | 1.2.2.3.5 | Cambiar Clave | 0.79d | 2015-04-14 13:06 | 2015-04-15 11:13 | 257 | -47.64d | 0d | Julian | 7.12h |
| 259 | 1.2.2.3.6 | Seleccionar tipo de producto | 0.79d | 2015-04-15 11:13 | 2015-04-16 10:20 | 258 | -47.64d | 0d | Julian | 7.12h |
| 260 | 1.2.2.3.7 | Mensajes Recibidos | 0.79d | 2015-04-16 10:20 | 2015-04-17 09:27 | 259 | -47.64d | 0d | Julian | 7.12h |
| 261 | 1.2.2.3.8 | Mis Compras | 0.79d | 2015-04-17 09:27 | 2015-04-20 08:34 | 260 | -47.64d | 0d | Julian | 7.12h |
| 262 | 1.2.2.3.9 | Calificar | 0.79d | 2015-04-20 08:34 | 2015-04-20 16:42 | 261 | -47.64d | 0d | Julian | 7.12h |
| 263 | 1.2.2.3.10 | Mis Ventas | 0.79d | 2015-04-20 16:42 | 2015-04-21 15:49 | 262 | -47.64d | 0d | Julian | 7.12h |
| 264 | 1.2.2.3.11 | Mis Productos | 0.79d | 2015-04-21 15:49 | 2015-04-22 14:56 | 263 | -47.64d | 0d | Julian | 7.12h |
| 265 | 1.2.2.3.12 | Responder Preguntas | 0.79d | 2015-04-22 14:56 | 2015-04-23 14:03 | 264 | -47.64d | 0d | Julian | 7.12h |
| 266 | 1.2.2.3.13 | Mis Datos | 0.79d | 2015-04-23 14:03 | 2015-04-24 13:10 | 265 | -47.64d | 0d | Julian | 7.12h |
| 267 | 1.2.2.4 | Registro | 9h | 2015-04-24 13:10 | 2015-04-27 14:10 | 245 | -47.64d | 0d | Julian | 9h |
| 268 | 1.2.2.5 | Autenticacion | 9h | 2015-04-27 14:10 | 2015-04-28 15:10 | 267 | -47.64d | 0d | Julian | 9h |
| 269 | 1.2.2.6 | Recordar Clave | 9h | 2015-04-28 15:10 | 2015-04-29 16:10 | 268 | -47.64d | 0d | Julian | 9h |
| 270 | 1.2.2.7 | Listado de productos | 9h | 2015-04-29 16:10 | 2015-05-01 08:10 | 269 | -47.64d | 0d | Julian | 9h |
| 271 | 1.2.2.8 | Detalle del producto | 0.89d | 2015-05-01 08:10 | 2015-05-04 08:10 | 270 | -47.64d | 0d | Julian | 8h |
| 272 | 1.2.2.9 | Detalle vendedor usuario | 0.89d | 2015-05-04 08:10 | 2015-05-05 08:10 | 271 | -47.64d | 0d | Julian | 8h |
| 273 | 1.2.2.10 | Preguntar a Vendedor | 0.89d | 2015-05-05 08:10 | 2015-05-06 08:10 | 272 | -47.64d | 0d | Julian | 8h |
| 274 | 1.2.2.11 | Panel de notificaciones | 0.89d | 2015-05-06 08:10 | 2015-05-07 08:10 | 273 | -47.64d | 0d | Julian | 8h |
| 275 | 1.2.2.12 | Newsletter | 0.89d | 2015-05-07 08:10 | 2015-05-08 08:10 | 274 | -47.64d | 0d | Julian | 8h |
| 276 | 1.2.2.13 | Mapa del sitio | 0.89d | 2015-05-08 08:10 | 2015-05-11 08:10 | 275 | -47.64d | 0d | Julian | 8h |
| 277 | 1.2.2.14 | Condiciones de uso | 0.89d | 2015-05-11 08:10 | 2015-05-12 08:10 | 276 | -47.64d | 0d | Julian | 8h |
| 278 | 1.2.2.15 | Contacto | 0.89d | 2015-05-12 08:10 | 2015-05-13 08:10 | 277 | -47.64d | 0d | Julian | 8h |
| 279 | 1.2.2.16 | Acerca de nosotros | 0.89d | 2015-05-13 08:10 | 2015-05-14 08:10 | 278 | -47.64d | 0d | Julian | 8h |

| ID | WBS | Task | Duration | Start | Finish | Predecessors | Total slack | Free slack | Resources | Work |
| --- | --- | --- | --- | --- | --- | --- | --- | --- | --- | --- |
| 280 | 1.2.3 | **Pruebas** | 5.33d | 2015-06-26 15:30 | 2015-07-06 15:30 | 12 | -83.9d | 0d |  | 48h |
| 281 | 1.2.3.1 | Pruebas Generales | 2.67d | 2015-06-26 15:30 | 2015-07-01 15:30 |  | -83.9d | 0d | Julian | 24h |
| 282 | 1.2.3.2 | Correciones | 2.67d | 2015-07-01 15:30 | 2015-07-06 15:30 | 281 | -83.9d | 0d | Gabriel | 24h |
| 283 | 1.2.4 | Primeras visitas cliente | 2.67d | 2015-07-06 15:30 | 2015-07-09 15:30 | 280 | -83.9d | 0d | Gabriel | 24h |
| 284 | 1.3 | **Fase 2 (Tienda)** | 5.48d | 2015-07-09 15:30 | 2015-07-17 16:51 | 11 | -83.9d | 0d |  | 92.08h |
| 285 | 1.3.1 | **Desarrollo** | 3.11d | 2015-07-09 15:30 | 2015-07-15 10:30 |  | -83.9d | 0d |  | 28h |
| 286 | 1.3.1.1 | **Detalle del Vendedor (Usuario)** | 2.44d | 2015-07-09 15:30 | 2015-07-14 13:30 |  | -83.9d | 0d |  | 22h |
| 287 | 1.3.1.1.1 | Acceso a datos | 4h | 2015-07-09 15:30 | 2015-07-10 10:30 |  | -83.9d | 0d | Gabriel | 4h |
| 288 | 1.3.1.1.2 | Informacion Básica | 3h | 2015-07-10 10:30 | 2015-07-10 14:30 | 287 | -83.9d | 0d | Gabriel | 3h |
| 289 | 1.3.1.1.3 | Comentarios Recibidos | 3h | 2015-07-10 14:30 | 2015-07-13 08:30 | 288 | -83.9d | 0d | Gabriel | 3h |
| 290 | 1.3.1.1.4 | Enviar mensaje prviado | 5h | 2015-07-13 08:30 | 2015-07-13 14:30 | 289 | -83.9d | 0d | Gabriel | 5h |
| 291 | 1.3.1.1.5 | Contar experiencia | 5h | 2015-07-13 14:30 | 2015-07-14 10:30 | 290 | -83.9d | 0d | Gabriel | 5h |
| 292 | 1.3.1.1.6 | Enviar correos de notificación | 2h | 2015-07-14 10:30 | 2015-07-14 13:30 | 291 | -83.9d | 0d | Gabriel | 2h |
| 293 | 1.3.1.2 | **Categorias** | 0.67d | 2015-07-14 13:30 | 2015-07-15 10:30 | 286 | -83.9d | 0d |  | 6h |
| 294 | 1.3.1.2.1 | Revision de funcionalidad correcta | 3h | 2015-07-14 13:30 | 2015-07-14 16:30 |  | -83.9d | 0d | Gabriel | 3h |
| 295 | 1.3.1.2.2 | Pruebas unitarias | 3h | 2015-07-14 16:30 | 2015-07-15 10:30 | 294 | -83.9d | 0d | Gabriel | 3h |
| 296 | 1.3.2 | **Diseño Web** | 2.37d | 2015-07-09 15:30 | 2015-07-14 11:51 | 11 | -83.16d | 0d |  | 21.36h |
| 297 | 1.3.2.1 | Categorias | 0.79d | 2015-07-09 15:30 | 2015-07-10 14:37 |  | -83.16d | 0d | Julian | 7.12h |
| 298 | 1.3.2.2 | Detalle Tienda | 0.79d | 2015-07-10 14:37 | 2015-07-13 13:44 | 297 | -83.16d | 0d | Julian | 7.12h |
| 299 | 1.3.2.3 | Actualizacion de Tienda | 0.79d | 2015-07-13 13:44 | 2015-07-14 11:51 | 298 | -83.16d | 0d | Julian | 7.12h |
| 300 | 1.3.3 | Pruebas Generales | 2.37d | 2015-07-14 11:51 | 2015-07-17 09:13 | 296 | -83.16d | 0d | Julian | 21.36h |
| 301 | 1.3.4 | Correciones | 2.37d | 2015-07-15 10:30 | 2015-07-17 16:51 | 285 | -83.9d | 0d | Gabriel | 21.36h |
| 302 | 1.4 | **Fase 3 (Cotizaciones)** | 14.58d | 2015-07-17 16:51 | 2015-08-11 11:04 | 284 | -83.9d | 0d |  | 188.18h |
| 303 | 1.4.1 | **Desarrollo** | 9.83d | 2015-07-17 16:51 | 2015-08-04 08:21 |  | -83.9d | 0d |  | 88.5h |
| 304 | 1.4.1.1 | **Publicar Cotizacion** | 2.17d | 2015-07-17 16:51 | 2015-07-22 11:21 |  | -83.9d | 0d |  | 19.5h |
| 305 | 1.4.1.1.1 | BD | 3h | 2015-07-17 16:51 | 2015-07-20 10:51 |  | -83.9d | 0d | Gabriel | 3h |
| 306 | 1.4.1.1.2 | Datos basicos | 3h | 2015-07-20 10:51 | 2015-07-20 14:51 | 305 | -83.9d | 0d | Gabriel | 3h |
| 307 | 1.4.1.1.3 | Cambiar ubicacion | 2h | 2015-07-20 14:51 | 2015-07-20 16:51 | 306 | -83.9d | 0d | Gabriel | 2h |
| 308 | 1.4.1.1.4 | Cambiar moto | 3h | 2015-07-20 16:51 | 2015-07-21 10:51 | 307 | -83.9d | 0d | Gabriel | 3h |
| 309 | 1.4.1.1.5 | Cargar posibles problemas | 4h | 2015-07-21 10:51 | 2015-07-21 15:51 | 308 | -83.9d | 0d | Gabriel | 4h |
| 310 | 1.4.1.1.6 | Cargar imagenes | 1.5h | 2015-07-21 15:51 | 2015-07-22 08:21 | 309 | -83.9d | 0d | Gabriel | 1.5h |
| 311 | 1.4.1.1.7 | Pruebas unitarias | 3h | 2015-07-22 08:21 | 2015-07-22 11:21 | 310 | -83.9d | 0d | Gabriel | 3h |

| ID | WBS | Task | Duration | Start | Finish | Predecessors | Total slack | Free slack | Resources | Work |
| --- | --- | --- | --- | --- | --- | --- | --- | --- | --- | --- |
| 312 | 1.4.1.2 | **Mis Cotizaciones (Taller)** | 1.89d | 2015-07-22 11:21 | 2015-07-24 13:21 | 304 | -83.9d | 0d |  | 17h |
| 313 | 1.4.1.2.1 | Mostrar indicadores | 3h | 2015-07-22 11:21 | 2015-07-22 15:21 |  | -83.9d | 0d | Gabriel | 3h |
| 314 | 1.4.1.2.2 | Cargar filtros | 5h | 2015-07-22 15:21 | 2015-07-23 11:21 | 313 | -83.9d | 0d | Gabriel | 5h |
| 315 | 1.4.1.2.3 | Listado de cotizaciones | 3h | 2015-07-23 11:21 | 2015-07-23 15:21 | 314 | -83.9d | 0d | Gabriel | 3h |
| 316 | 1.4.1.2.4 | Paginacion | 2h | 2015-07-23 15:21 | 2015-07-24 08:21 | 315 | -83.9d | 0d | Gabriel | 2h |
| 317 | 1.4.1.2.5 | BD | 2h | 2015-07-24 08:21 | 2015-07-24 10:21 | 316 | -83.9d | 0d | Gabriel | 2h |
| 318 | 1.4.1.2.6 | Pruebas unitarias | 2h | 2015-07-24 10:21 | 2015-07-24 13:21 | 317 | -83.9d | 0d | Gabriel | 2h |
| 319 | 1.4.1.3 | **Detalle Cotizacion(Taller)** | 2d | 2015-07-24 13:21 | 2015-07-28 15:21 | 312 | -83.9d | 0d |  | 18h |
| 320 | 1.4.1.3.1 | BD | 3h | 2015-07-24 13:21 | 2015-07-24 16:21 |  | -83.9d | 0d | Gabriel | 3h |
| 321 | 1.4.1.3.2 | Indicadores | 2h | 2015-07-24 16:21 | 2015-07-27 09:21 | 320 | -83.9d | 0d | Gabriel | 2h |
| 322 | 1.4.1.3.3 | Informacion de la solciitud | 3h | 2015-07-27 09:21 | 2015-07-27 13:21 | 321 | -83.9d | 0d | Gabriel | 3h |
| 323 | 1.4.1.3.4 | Imagenes | 2h | 2015-07-27 13:21 | 2015-07-27 15:21 | 322 | -83.9d | 0d | Gabriel | 2h |
| 324 | 1.4.1.3.5 | **Propuesta** | 0.44d | 2015-07-27 15:21 | 2015-07-28 10:21 | 323 | -83.9d | 0d |  | 4h |
| 325 | 1.4.1.3.5.1 | Datos basicos | 1h | 2015-07-27 15:21 | 2015-07-27 16:21 |  | -83.9d | 0d | Gabriel | 1h |
| 326 | 1.4.1.3.5.2 | Responder | 3h | 2015-07-27 16:21 | 2015-07-28 10:21 | 325 | -83.9d | 0d | Gabriel | 3h |
| 327 | 1.4.1.3.6 | Mensajes anteriores | 4h | 2015-07-28 10:21 | 2015-07-28 15:21 | 324 | -83.9d | 0d | Gabriel | 4h |
| 328 | 1.4.1.4 | **Mis Cotizaciones(Persona)** | 1.56d | 2015-07-28 15:21 | 2015-07-30 13:21 | 319 | -83.9d | 0d |  | 14h |
| 329 | 1.4.1.4.1 | BD | 2h | 2015-07-28 15:21 | 2015-07-29 08:21 |  | -83.9d | 0d | Gabriel | 2h |
| 330 | 1.4.1.4.2 | Indicadores | 2h | 2015-07-29 08:21 | 2015-07-29 10:21 | 329 | -83.9d | 0d | Gabriel | 2h |
| 331 | 1.4.1.4.3 | Filtro | 2h | 2015-07-29 10:21 | 2015-07-29 13:21 | 330 | -83.9d | 0d | Gabriel | 2h |
| 332 | 1.4.1.4.4 | Listado de propuestas | 4h | 2015-07-29 13:21 | 2015-07-30 08:21 | 331 | -83.9d | 0d | Gabriel | 4h |
| 333 | 1.4.1.4.5 | Paginacion | 2h | 2015-07-30 08:21 | 2015-07-30 10:21 | 332 | -83.9d | 0d | Gabriel | 2h |
| 334 | 1.4.1.4.6 | Pruebas unitarias | 2h | 2015-07-30 10:21 | 2015-07-30 13:21 | 333 | -83.9d | 0d | Gabriel | 2h |
| 335 | 1.4.1.5 | **Detalle Cotizacion(Persona)** | 2.22d | 2015-07-30 13:21 | 2015-08-04 08:21 | 328 | -83.9d | 0d |  | 20h |
| 336 | 1.4.1.5.1 | BD | 3h | 2015-07-30 13:21 | 2015-07-30 16:21 |  | -83.9d | 0d | Gabriel | 3h |
| 337 | 1.4.1.5.2 | Detalle de la solicitud | 2h | 2015-07-30 16:21 | 2015-07-31 09:21 | 336 | -83.9d | 0d | Gabriel | 2h |
| 338 | 1.4.1.5.3 | Listado de propuestas | 4h | 2015-07-31 09:21 | 2015-07-31 14:21 | 337 | -83.9d | 0d | Gabriel | 4h |
| 339 | 1.4.1.5.4 | Detalle de propuesta | 3h | 2015-07-31 14:21 | 2015-08-03 08:21 | 338 | -83.9d | 0d | Gabriel | 3h |
| 340 | 1.4.1.5.5 | Aceptar/Rechazar propiesta | 2h | 2015-08-03 08:21 | 2015-08-03 10:21 | 339 | -83.9d | 0d | Gabriel | 2h |
| 341 | 1.4.1.5.6 | Responder mensajes | 3h | 2015-08-03 10:21 | 2015-08-03 14:21 | 340 | -83.9d | 0d | Gabriel | 3h |
| 342 | 1.4.1.5.7 | Pruebas unitarias | 3h | 2015-08-03 14:21 | 2015-08-04 08:21 | 341 | -83.9d | 0d | Gabriel | 3h |

| ID | WBS | Task | Duration | Start | Finish | Predecessors | Total slack | Free slack | Resources | Work |
| --- | --- | --- | --- | --- | --- | --- | --- | --- | --- | --- |
| 343 | 1.4.2 | **Diseño Web** | 7.12d | 2015-07-17 16:51 | 2015-07-29 16:56 | 284 | -76.44d | 0d |  | 56.96h |
| 344 | 1.4.2.1 | Publicacion Servicio | 0.79d | 2015-07-17 16:51 | 2015-07-20 15:58 |  | -76.44d | 0d |  |  |
| 345 | 1.4.2.2 | Paso1 | 0.79d | 2015-07-20 15:58 | 2015-07-21 15:06 | 344 | -76.44d | 0d | Julian | 7.12h |
| 346 | 1.4.2.3 | Paso2 | 0.79d | 2015-07-21 15:06 | 2015-07-22 14:13 | 345 | -76.44d | 0d | Julian | 7.12h |
| 347 | 1.4.2.4 | Paso3 | 0.79d | 2015-07-22 14:13 | 2015-07-23 13:20 | 346 | -76.44d | 0d | Julian | 7.12h |
| 348 | 1.4.2.5 | Publicar Cotizacion | 0.79d | 2015-07-23 13:20 | 2015-07-24 11:27 | 347 | -76.44d | 0d | Julian | 7.12h |
| 349 | 1.4.2.6 | Mis Cotizaciones (Taller) | 0.79d | 2015-07-24 11:27 | 2015-07-27 10:34 | 348 | -76.44d | 0d | Julian | 7.12h |
| 350 | 1.4.2.7 | Detalle Cotizacion(Taller) | 0.79d | 2015-07-27 10:34 | 2015-07-28 09:42 | 349 | -76.44d | 0d | Julian | 7.12h |
| 351 | 1.4.2.8 | Mis Cotizaciones(Persona) | 0.79d | 2015-07-28 09:42 | 2015-07-29 08:49 | 350 | -76.44d | 0d | Julian | 7.12h |
| 352 | 1.4.2.9 | Detalle Cotizacion(Persona) | 0.79d | 2015-07-29 08:49 | 2015-07-29 16:56 | 351 | -76.44d | 0d | Julian | 7.12h |
| 353 | 1.4.3 | Pruebas Generales | 2.37d | 2015-08-04 08:21 | 2015-08-06 14:43 | 303 | -83.9d | 0d | Julian | 21.36h |
| 354 | 1.4.4 | Correciones | 2.37d | 2015-08-06 14:43 | 2015-08-11 11:04 | 353 | -83.9d | 0d | Gabriel | 21.36h |
